Schedule from MS Project XML, 2025-11-19 to 2026-04-07.

## Calendars

- Programación Confinamiento Metálicp: Mon-Fri 07:00-12:00, 13:00-16:00; Sat 07:00-11:00; Sun off. Exceptions (off unless hours are given): 2025-12-08, 2025-12-25, 2026-01-01, 2026-01-12, 2026-03-23, 2026-04-02 to 2026-04-03.

## Resources

| Resource |
| --- |
| No Asignado |
| Peso Estructura |

## Schedule

| ID | WBS | Task | Type | Duration | Start | Finish | Predecessors |
| --- | --- | --- | --- | --- | --- | --- | --- |
| 1 | 1 | **Estructura Confinamiento Muros Estación 2** |  | 99d | 2025-11-19 | 2026-03-31 |  |
| 2 | 1.1 | Acta Inicio | milestone | 0d | 2025-11-19 | 2025-11-24 |  |
| 3 | 1.2 | **Nave Central** |  | 99d | 2025-11-19 | 2026-03-31 |  |
| 4 | 1.2.1 | **Nivel Intermedio** |  | 99d | 2025-11-19 | 2026-03-31 |  |
| 5 | 1.2.1.1 | **Cuartos T02-T23** |  | 11.5d | 2025-11-19 | 2025-12-03 |  |
| 6 | 1.2.1.1.1 | Replanteo Columnas |  | 2d | 2025-11-24 | 2025-11-26 | 2 |
| 7 | 1.2.1.1.2 | Compra materiales y Fabricación |  | 4d | 2025-11-24 | 2025-11-28 | 6SS |
| 8 | 1.2.1.1.3 | Llegada Columnas Metálicas |  | 1d | 2025-11-28 | 2025-11-29 | 7 |
| 9 | 1.2.1.1.4 | Llegada Cerchas/Vigas Metálicas |  | 1d | 2025-12-01 | 2025-12-02 | 8FS+1d |
| 10 | 1.2.1.1.5 | Instalación Columnas |  | 2d | 2025-11-29 | 2025-12-02 | 8 |
| 11 | 1.2.1.1.6 | Instalación Cerchas/Metálicas h:3.50 - 3.60 |  | 3d | 2025-12-02 | 2025-12-05 | 9, 10FS-104000h |
| 12 | 1.2.1.1.7 | Entrega Estructura metálica |  | 2d | 2025-12-02 | 2025-12-04 | 10, 11FS-104000h |
| 13 | 1.2.1.1.8 | Cuarto T03 |  | 11.5d | 2025-11-19 | 2025-12-03 |  |
| 14 | 1.2.1.1.9 | **Replanteo Columnas** |  | 2d | 2026-03-12 | 2026-03-16 | 102 |
| 15 | 1.2.1.1.9.1 | Replanteo Columnas |  | 2d | 2025-11-24 | 2025-11-26 | 2 |
| 16 | 1.2.1.1.9.2 | Compra materiales y Fabricación |  | 4d | 2025-11-24 | 2025-11-28 | 15SS |
| 17 | 1.2.1.1.9.3 | Llegada Columnas Metálicas |  | 1d | 2025-11-29 | 2025-12-01 | 16FS+1d |
| 18 | 1.2.1.1.9.4 | Llegada Cerchas/Vigas Metálicas |  | 1d | 2025-12-02 | 2025-12-03 | 17FS+1d |
| 19 | 1.2.1.1.9.5 | Instalación Columnas |  | 2d | 2025-12-01 | 2025-12-03 | 17 |
| 20 | 1.2.1.1.9.6 | Instalación Cerchas/Metálicas h:3.50 - 3.60 |  | 3d | 2025-12-03 | 2025-12-09 | 18, 19FS-104000h |
| 21 | 1.2.1.1.9.7 | Entrega Estructura metálica |  | 2d | 2025-12-05 | 2025-12-09 | 20FS-104000h |
| 22 | 1.2.1.2 | **Cuartos T11-T12-T22** |  | 27.5d | 2025-11-19 | 2025-12-25 |  |
| 23 | 1.2.1.2.1 | Replanteo Columnas |  | 2d | 2025-12-03 | 2025-12-05 | 19 |
| 24 | 1.2.1.2.2 | Compra materiales y Fabricación |  | 6d | 2025-12-03 | 2025-12-12 | 23SS |
| 25 | 1.2.1.2.3 | Cuartos Ejes 7 - 9 |  | 15d | 2025-11-19 | 2025-12-08 |  |
| 26 | 1.2.1.2.4 | Llegada Columnas Metálicas |  | 1d | 2025-12-13 | 2025-12-15 | 24FS+1d |
| 27 | 1.2.1.2.5 | Llegada Cerchas/Vigas Metálicas |  | 2d | 2025-12-16 | 2025-12-18 | 26FS+1d |
| 28 | 1.2.1.2.6 | Instalación Columnas |  | 5d | 2025-12-15 | 2025-12-22 | 26 |
| 29 | 1.2.1.2.7 | Instalación Cerchas/Metálicas h:3.50 - 3.60 |  | 5d | 2025-12-18 | 2025-12-25 | 27, 28FS-104000h |
| 30 | 1.2.1.2.8 | Entrega Estructura metálica |  | 2d | 2025-11-19 | 2025-11-21 | 29FS-104000h |

| ID | WBS | Task | Duration | Start | Finish | Predecessors |
| --- | --- | --- | --- | --- | --- | --- |
| 31 | 1.2.1.2.9 | **Cuartos T06** | 21.5d | 2025-11-19 | 2025-12-17 |  |
| 32 | 1.2.1.2.9.1 | Replanteo Columnas | 2d | 2025-12-03 | 2025-12-05 | 19 |
| 33 | 1.2.1.2.9.2 | Compra materiales y Fabricación | 4d | 2025-12-03 | 2025-12-09 | 32SS |
| 34 | 1.2.1.2.9.3 | Llegada Columnas Metálicas | 1d | 2025-12-10 | 2025-12-11 | 33FS+1d |
| 35 | 1.2.1.2.9.4 | Llegada Cerchas/Vigas Metálicas | 1d | 2025-12-12 | 2025-12-13 | 34FS+1d |
| 36 | 1.2.1.2.9.5 | Instalación Columnas | 2d | 2025-12-11 | 2025-12-13 | 34 |
| 37 | 1.2.1.2.9.6 | Instalación Cerchas/Metálicas h:3.50 - 3.60 | 3d | 2025-12-13 | 2025-12-17 | 35, 36FS-104000h |
| 38 | 1.2.1.2.9.7 | Entrega Estructura metálica | 2d | 2025-11-19 | 2025-11-21 | 37FS-104000h |
| 39 | 1.2.1.3 | **Cuartos Ejes 7 - 9 --- A-D' (Zona 6)** | 30d | 2025-11-19 | 2025-12-29 |  |
| 40 | 1.2.1.3.1 | Replanteo Columnas | 2d | 2025-12-13 | 2025-12-16 | 36 |
| 41 | 1.2.1.3.2 | Compra materiales y Fabricación | 7d | 2025-12-13 | 2025-12-23 | 40SS |
| 42 | 1.2.1.3.3 | Llegada Cerchas/Vigas Metálicas | 2d | 2025-12-27 | 2025-12-30 | 43FS+1d |
| 43 | 1.2.1.3.4 | Llegada Columnas Metálicas | 2d | 2025-12-24 | 2025-12-26 | 41FS+1d |
| 44 | 1.2.1.3.5 | Llegada Cerchas/Vigas Metálicas | 2d | 2025-11-19 | 2025-11-21 | 93FS+1d |
| 45 | 1.2.1.3.6 | Instalación Columnas | 5d | 2025-12-26 | 2026-01-01 | 43 |
| 46 | 1.2.1.3.7 | Llegada Cerchas/Vigas Metálicas | 2d | 2025-11-19 | 2025-11-21 | 116FS+1d |
| 47 | 1.2.1.3.8 | Instalación Cerchas/Vigas Metálicas h:3.50 - 3.60 | 6d | 2025-12-30 | 2026-01-08 | 42, 45FS-104000h |
| 48 | 1.2.1.3.9 | Entrega Estructura metálica | 3d | 2026-01-07 | 2026-01-10 | 47FS-104000h |
| 49 | 1.2.1.3.10 | Llegada Columnas Metálicas | 1d | 2026-02-17 | 2026-02-18 | 138FS+1d |
| 50 | 1.2.1.3.11 | **Llegada Columnas Metálicas** | 1d | 2026-02-20 | 2026-02-21 | 159FS+1d |
| 51 | 1.2.1.3.11.1 | Replanteo Columnas | 2d | 2026-01-06 | 2026-01-08 | 45 |
| 52 | 1.2.1.3.11.2 | Compra materiales y Fabricación | 4d | 2026-01-06 | 2026-01-10 | 51SS |
| 53 | 1.2.1.3.12 | **Llegada Cerchas/Vigas Metálicas** | 2d | 2026-02-19 | 2026-02-21 | 70FS+1d |
| 54 | 1.2.1.3.12.1 | Llegada Columnas Metálicas | 1d | 2026-01-13 | 2026-01-14 | 52FS+1d |
| 55 | 1.2.1.3.12.2 | Llegada Cerchas/Vigas Metálicas | 1d | 2026-01-15 | 2026-01-16 | 54FS+1d |
| 56 | 1.2.1.3.12.3 | Instalación Columnas | 6d | 2026-01-14 | 2026-01-22 | 54 |
| 57 | 1.2.1.3.12.4 | Instalación Cerchas/Vigas Metálicas h:3.50 - 3.60 | 6d | 2026-01-19 | 2026-01-26 | 55, 56FS-104000h |
| 58 | 1.2.1.3.12.5 | Instalación Columnas | 2d | 2026-02-09 | 2026-02-11 | 197 |

| ID | WBS | Task | Duration | Start | Finish | Predecessors |
| --- | --- | --- | --- | --- | --- | --- |
| 59 | 1.2.1.4 | **Cuartos Ejes 7-9 (Zona 5)** | 17d | 2025-11-19 | 2025-12-10 |  |
| 60 | 1.2.1.4.1 | Entrega Estructura metálica | 2d | 2026-01-22 | 2026-01-24 | 57FS-104000h |
| 61 | 1.2.1.4.2 | Replanteo Columnas | 2d | 2026-01-22 | 2026-01-24 | 56 |
| 62 | 1.2.1.4.3 | Llegada Columnas Metálicas | 2d | 2026-01-30 | 2026-02-03 | 69FS+1d |
| 63 | 1.2.1.4.4 | Llegada Cerchas/Vigas Metálicas | 2d | 2026-02-04 | 2026-02-06 | 62FS+1d |
| 64 | 1.2.1.4.5 | Instalación Columnas | 5d | 2026-02-03 | 2026-02-09 | 62 |
| 65 | 1.2.1.4.6 | Instalación Cerchas/Vigas Metálicas h:3.50 - 3.60 | 5d | 2026-02-06 | 2026-02-12 | 63, 64FS-104000h |
| 66 | 1.2.1.4.7 | Entrega Estructura metálica | 2d | 2026-02-10 | 2026-02-12 | 65FS-104000h |
| 67 | 1.2.1.5 | **Cuartos Ejes 7-9 (Zona 7)** | 19d | 2026-02-06 | 2026-03-03 |  |
| 68 | 1.2.1.5.1 | Replanteo Columnas | 2d | 2026-02-06 | 2026-02-09 | 63 |
| 69 | 1.2.1.5.2 | Compra materiales y Fabricación | 6d | 2026-01-22 | 2026-01-29 |  |
| 70 | 1.2.1.5.3 | Llegada Columnas Metálicas | 2d | 2026-02-16 | 2026-02-18 | 71FS+1d |
| 71 | 1.2.1.5.4 | Compra materiales y Fabricación | 6d | 2026-02-06 | 2026-02-13 |  |
| 72 | 1.2.1.5.5 | Instalación Cerchas/Vigas Metálicas h:3.50 - 3.60 | 5d | 2026-02-21 | 2026-02-27 | 53, 75FS-104000h |
| 73 | 1.2.1.5.6 | **Cuartos Ejes 4 - 7** | 17d | 2026-02-09 | 2026-03-03 |  |
| 74 | 1.2.1.5.6.1 | Llegada Columnas Metálicas | 2d | 2026-02-18 | 2026-02-20 | 92FS+1d |
| 75 | 1.2.1.5.7 | **Instalación Columnas** | 5d | 2026-02-18 | 2026-02-24 | 70 |
| 76 | 1.2.1.5.7.1 | Llegada Cerchas/Vigas Metálicas | 2d | 2026-02-21 | 2026-02-24 | 74FS+1d |
| 77 | 1.2.1.5.7.2 | Instalación Columnas | 5d | 2026-02-20 | 2026-02-26 | 74 |
| 78 | 1.2.1.5.8 | **Entrega Estructura metálica** | 2d | 2026-02-25 | 2026-02-27 | 72FS-104000h |
| 79 | 1.2.1.5.8.1 | Instalación Cerchas/Vigas Metálicas h:3.50 - 3.60 | 5d | 2026-02-24 | 2026-03-03 | 76, 77FS-104000h |
| 80 | 1.2.1.5.8.2 | Entrega Estructura metálica | 2d | 2026-02-27 | 2026-03-02 | 79FS-104000h |
| 81 | 1.2.1.5.8.3 | Replanteo Columnas | 2d | 2026-02-09 | 2026-02-11 | 68 |
| 82 | 1.2.1.6 | **Cuartos Ejes (Zona 8A)** | 17d | 2026-02-11 | 2026-03-05 |  |
| 83 | 1.2.1.6.1 | Replanteo Columnas | 2d | 2026-02-11 | 2026-02-13 | 81 |
| 84 | 1.2.1.6.2 | Compra materiales y Fabricación | 6d | 2026-02-11 | 2026-02-19 | 83SS |
| 85 | 1.2.1.6.3 | Llegada Columnas Metálicas | 2d | 2026-02-20 | 2026-02-23 | 84FS+1d |
| 86 | 1.2.1.6.4 | Llegada Cerchas/Vigas Metálicas | 2d | 2026-02-24 | 2026-02-26 | 85FS+1d |
| 87 | 1.2.1.6.5 | Instalación Columnas | 5d | 2026-02-23 | 2026-03-02 | 85 |
| 88 | 1.2.1.6.6 | Instalación Cerchas/Vigas Metálicas h:3.50 - 3.60 | 5d | 2026-02-26 | 2026-03-05 | 86, 87FS-104000h |
| 89 | 1.2.1.6.7 | Entrega Estructura metálica | 2d | 2026-03-02 | 2026-03-04 | 88FS-104000h |

| ID | WBS | Task | Duration | Start | Finish | Predecessors |
| --- | --- | --- | --- | --- | --- | --- |
| 90 | 1.2.1.7 | **Cuartos Ejes 1-2 (Zona 4)** | 17d | 2025-11-19 | 2025-12-10 |  |
| 91 | 1.2.1.7.1 | **Replanteo Columnas** | 6d | 2025-11-19 | 2025-11-26 |  |
| 92 | 1.2.1.7.1.1 | Compra materiales y Fabricación | 6d | 2025-11-19 | 2025-11-26 |  |
| 93 | 1.2.1.7.2 | Llegada Columnas Metálicas | 2d | 2026-02-23 | 2026-02-25 | 99FS+1d |
| 94 | 1.2.1.7.3 | Instalación Cerchas/Vigas Metálicas h:3.50 - 3.60 | 5d | 2026-03-02 | 2026-03-07 | 44, 103FS-104000h |
| 95 | 1.2.1.8 | **Cuartos Ejes (Zona 6A)** | 17d | 2025-11-19 | 2025-12-10 |  |
| 96 | 1.2.1.8.1 | Llegada Columnas Metálicas | 2d | 2026-02-25 | 2026-02-27 | 115FS+1d |
| 97 | 1.2.1.8.2 | Llegada Cerchas/Vigas Metálicas | 2d | 2026-03-02 | 2026-03-04 | 96FS+1d |
| 98 | 1.2.1.8.3 | Instalación Columnas | 5d | 2026-02-27 | 2026-03-06 | 96 |
| 99 | 1.2.1.8.4 | Compra materiales y Fabricación | 6d | 2026-02-13 | 2026-02-21 |  |
| 100 | 1.2.1.8.5 | Instalación Cerchas/Vigas Metálicas h:3.50 - 3.60 | 5d | 2026-03-04 | 2026-03-10 | 97, 98FS-104000h |
| 101 | 1.2.1.8.6 | Entrega Estructura metálica | 2d | 2026-03-06 | 2026-03-10 | 100FS-104000h |
| 102 | 1.2.1.9 | **Cuartos Ejes 4 - 7 (Zona 8B)** | 17d | 2025-11-19 | 2025-12-10 |  |
| 103 | 1.2.1.9.1 | Instalación Columnas | 5d | 2025-11-19 | 2025-11-25 |  |
| 104 | 1.2.1.9.2 | Replanteo Columnas | 2d | 2026-02-19 | 2026-02-21 | 109 |
| 105 | 1.2.1.9.3 | Compra materiales y Fabricación | 6d | 2026-02-19 | 2026-02-26 | 104SS |
| 106 | 1.2.1.9.4 | Entrega Estructura metálica | 2d | 2026-03-04 | 2026-03-06 | 94FS-104000h |
| 107 | 1.2.1.9.5 | Llegada Columnas Metálicas | 2d | 2026-02-27 | 2026-03-03 | 105FS+1d |
| 108 | 1.2.1.9.6 | Llegada Cerchas/Vigas Metálicas | 2d | 2026-03-04 | 2026-03-06 | 107FS+1d |
| 109 | 1.2.1.9.7 | Replanteo Columnas | 2d | 2026-02-17 | 2026-02-19 | 91 |
| 110 | 1.2.1.9.8 | Instalación Columnas | 5d | 2026-03-03 | 2026-03-09 | 107 |
| 111 | 1.2.1.9.9 | Instalación Cerchas/Vigas Metálicas h:3.50 - 3.60 | 5d | 2026-03-06 | 2026-03-12 | 108, 110FS-104000h |
| 112 | 1.2.1.9.10 | Entrega Estructura metálica | 2d | 2026-03-10 | 2026-03-12 | 111FS-104000h |
| 113 | 1.2.1.10 | **Cuartos Ejes 4 - 7 (Zona 9A)** | 17d | 2025-11-19 | 2025-12-10 |  |
| 114 | 1.2.1.10.1 | Replanteo Columnas | 2d | 2025-11-19 | 2025-11-21 | 104 |
| 115 | 1.2.1.10.2 | Compra materiales y Fabricación | 6d | 2025-11-19 | 2025-11-26 |  |
| 116 | 1.2.1.10.3 | Llegada Columnas Metálicas | 2d | 2026-03-03 | 2026-03-05 | 128FS+1d |
| 117 | 1.2.1.10.4 | Instalación Cerchas/Vigas Metálicas h:3.50 - 3.60 | 5d | 2026-03-09 | 2026-03-16 | 46, 132FS-104000h |

| ID | WBS | Task | Duration | Start | Finish | Predecessors |
| --- | --- | --- | --- | --- | --- | --- |
| 118 | 1.2.1.11 | **Cuartos Ejes 4 - 7 (Zona 9B)** | 17d | 2026-03-12 | 2026-04-07 |  |
| 119 | 1.2.1.11.1 | Llegada Columnas Metálicas | 2d | 2026-03-21 | 2026-03-25 | 137FS+1d |
| 120 | 1.2.1.11.2 | Llegada Cerchas/Vigas Metálicas | 2d | 2026-03-26 | 2026-03-30 | 119FS+1d |
| 121 | 1.2.1.11.3 | Instalación Columnas | 5d | 2026-03-25 | 2026-04-01 | 119 |
| 122 | 1.2.1.11.4 | Instalación Cerchas/Vigas Metálicas h:3.50 - 3.60 | 5d | 2026-03-30 | 2026-04-07 | 120, 121FS-104000h |
| 123 | 1.2.1.11.5 | Entrega Estructura metálica | 2d | 2026-04-01 | 2026-04-07 | 122FS-104000h |
| 124 | 1.2.2 | **Nivel Acceso** | 24.5d | 2025-11-19 | 2025-12-22 |  |
| 125 | 1.2.2.1 | **Cuartos Ejes 1 - 4** | 11.5d | 2025-11-19 | 2025-12-03 |  |
| 126 | 1.2.2.1.1 | Replanteo Columnas | 2d | 2026-02-06 | 2026-02-09 | 63 |
| 127 | 1.2.2.1.2 | Compra materiales y Fabricación | 4d | 2026-02-06 | 2026-02-11 | 126SS |
| 128 | 1.2.2.1.3 | Compra materiales y Fabricación | 6d | 2026-02-21 | 2026-03-02 |  |
| 129 | 1.2.2.1.4 | Llegada Columnas Metálicas | 1d | 2026-02-12 | 2026-02-13 | 127FS+1d |
| 130 | 1.2.2.1.5 | Llegada Cerchas/Vigas Metálicas | 1d | 2026-02-16 | 2026-02-17 | 129FS+1d |
| 131 | 1.2.2.1.6 | Instalación Columnas | 2d | 2026-02-13 | 2026-02-17 | 129 |
| 132 | 1.2.2.1.7 | Instalación Columnas | 5d | 2026-03-05 | 2026-03-11 |  |
| 133 | 1.2.2.1.8 | Instalación Cerchas/Vigas Metálicas h:3.50 - 3.60 | 3d | 2026-02-17 | 2026-02-20 | 130, 131FS-104000h |
| 134 | 1.2.2.1.9 | Entrega Estructura metálica | 2d | 2026-02-18 | 2026-02-20 | 133FS-104000h |
| 135 | 1.2.2.1.10 | Entrega Estructura metálica | 2d | 2026-03-12 | 2026-03-14 | 117FS-104000h |
| 136 | 1.2.2.2 | **Cuartos Ejes 4-6** | 12.5d | 2026-02-09 | 2026-02-25 |  |
| 137 | 1.2.2.2.1 | Compra materiales y Fabricación | 6d | 2026-03-12 | 2026-03-20 | 14SS |
| 138 | 1.2.2.2.2 | Compra materiales y Fabricación | 4d | 2026-02-10 | 2026-02-16 | 154SS+1d |
| 139 | 1.2.2.2.3 | Instalación Columnas | 2d | 2026-02-18 | 2026-02-20 | 49 |
| 140 | 1.2.2.2.4 | Entrega Estructura metálica | 2d | 2026-02-23 | 2026-02-25 | 161FS-104000h |
| 141 | 1.2.2.2.5 | Compra materiales y Fabricación | 4d | 2026-02-23 | 2026-02-27 | 157SS+1d |
| 142 | 1.2.2.2.6 | Llegada Columnas Metálicas | 1d | 2026-03-02 | 2026-03-03 | 141FS+1d |
| 143 | 1.2.2.2.7 | Llegada Cerchas/Vigas Metálicas | 1d | 2026-03-04 | 2026-03-05 | 142FS+1d |
| 144 | 1.2.2.2.8 | Instalación Columnas | 2d | 2026-03-03 | 2026-03-05 | 142 |
| 145 | 1.2.2.2.9 | Instalación Cerchas/Vigas Metálicas h:3.50 - 3.60 | 3d | 2026-03-05 | 2026-03-09 | 143, 144FS-104000h |
| 146 | 1.2.2.2.10 | Entrega Estructura metálica | 2d | 2026-03-06 | 2026-03-10 | 145FS-104000h |

| ID | WBS | Task | Duration | Start | Finish | Predecessors |
| --- | --- | --- | --- | --- | --- | --- |
| 147 | 1.2.2.3 | **Cuartos Ejes 7-8** | 11.5d | 2026-02-11 | 2026-02-26 |  |
| 148 | 1.2.2.3.1 | Replanteo Columnas | 2d | 2026-02-11 | 2026-02-13 | 154 |
| 149 | 1.2.2.3.2 | Compra materiales y Fabricación | 4d | 2026-02-11 | 2026-02-17 | 148SS |
| 150 | 1.2.2.3.3 | Llegada Columnas Metálicas | 1d | 2026-02-18 | 2026-02-19 | 149FS+1d |
| 151 | 1.2.2.3.4 | Llegada Cerchas/Vigas Metálicas | 1d | 2026-02-20 | 2026-02-21 | 150FS+1d |
| 152 | 1.2.2.3.5 | Instalación Columnas | 2d | 2026-02-19 | 2026-02-21 | 150 |
| 153 | 1.2.2.3.6 | Instalación Cerchas/Vigas Metálicas h:3.50 - 3.60 | 3d | 2026-02-21 | 2026-02-25 | 151, 152FS-104000h |
| 154 | 1.2.2.3.7 | Replanteo Columnas | 2d | 2026-02-09 | 2026-02-11 |  |
| 155 | 1.2.2.3.8 | Entrega Estructura metálica | 2d | 2026-02-24 | 2026-02-26 | 153FS-104000h |
| 156 | 1.2.2.4 | **Cuartos Ejes 8-9 C-E** | 18d | 2026-02-13 | 2026-03-09 |  |
| 157 | 1.2.2.4.1 | Replanteo Columnas | 2d | 2026-02-21 | 2026-02-24 | 163FS+2d |
| 158 | 1.2.2.4.2 | Llegada Cerchas/Vigas Metálicas | 1d | 2026-02-19 | 2026-02-20 | 49FS+1d |
| 159 | 1.2.2.4.3 | Compra materiales y Fabricación | 4d | 2026-02-13 | 2026-02-19 | 182SS |
| 160 | 1.2.2.4.4 | Instalación Columnas | 8d | 2026-02-21 | 2026-03-04 | 50 |
| 161 | 1.2.2.4.5 | Instalación Cerchas/Vigas Metálicas h:3.50 - 3.60 | 3d | 2026-02-20 | 2026-02-24 |  |
| 162 | 1.2.2.5 | **Cuartos Ejes 8-9 A-B** | 13.5d | 2026-02-17 | 2026-03-05 |  |
| 163 | 1.2.2.5.1 | Replanteo Columnas | 2d | 2026-02-17 | 2026-02-19 | 182 |
| 164 | 1.2.2.6 | **Cuartos Ejes 6-7** | 12.5d | 2026-02-21 | 2026-03-10 |  |
| 165 | 1.2.2.6.1 | Compra materiales y Fabricación | 4d | 2026-02-17 | 2026-02-21 | 163SS |
| 166 | 1.2.2.6.2 | Llegada Columnas Metálicas | 1d | 2026-02-23 | 2026-02-24 | 165FS+1d |
| 167 | 1.2.2.6.3 | Llegada Cerchas/Vigas Metálicas | 1d | 2026-02-25 | 2026-02-26 | 166FS+1d |
| 168 | 1.2.2.6.4 | Instalación Columnas | 5d | 2026-02-24 | 2026-03-03 | 166 |
| 169 | 1.2.2.6.5 | Instalación Cerchas/Vigas Metálicas h:3.50 - 3.60 | 5d | 2026-02-27 | 2026-03-05 | 167, 168FS-104000h |
| 170 | 1.2.2.6.6 | Entrega Estructura metálica | 2d | 2026-03-03 | 2026-03-05 | 169FS-104000h |

| ID | WBS | Task | Duration | Start | Finish | Predecessors |
| --- | --- | --- | --- | --- | --- | --- |
| 171 | 1.3 | **Edificio Ascendente 2** | 52.5d | 2026-01-22 | 2026-03-31 |  |
| 172 | 1.3.1 | **Nivel Acceso** | 19.5d | 2026-01-22 | 2026-02-16 |  |
| 173 | 1.3.1.1 | **Cuartos Ejes M-P --- 11-12** | 19.5d | 2026-01-22 | 2026-02-16 |  |
| 174 | 1.3.1.1.1 | Replanteo Columnas | 2d | 2026-01-22 | 2026-01-24 | 56 |
| 175 | 1.3.1.1.2 | Compra materiales y Fabricación | 4d | 2026-01-22 | 2026-01-27 | 174SS |
| 176 | 1.3.1.1.3 | Llegada Columnas Metálicas | 1d | 2026-01-28 | 2026-01-29 | 175FS+1d |
| 177 | 1.3.1.1.4 | Llegada Cerchas/Vigas Metálicas | 1d | 2026-01-30 | 2026-02-02 | 176FS+1d |
| 178 | 1.3.1.1.5 | Instalación Columnas | 3d | 2026-01-29 | 2026-02-03 | 176 |
| 179 | 1.3.1.1.6 | Instalación Cerchas/Metálicas h:3.50 - 3.60 | 3d | 2026-02-02 | 2026-02-05 | 177, 178FS-104000h |
| 180 | 1.3.1.1.7 | Entrega Estructura metálica | 2d | 2026-02-03 | 2026-02-05 | 179FS-104000h |
| 181 | 1.3.1.1.8 | Cuartos Ejes P'-T --- 11-12 | 11.5d | 2026-02-02 | 2026-02-16 |  |
| 182 | 1.3.1.1.9 | **Replanteo Columnas** | 2d | 2026-02-13 | 2026-02-17 | 148 |
| 183 | 1.3.1.1.9.1 | Replanteo Columnas | 2d | 2026-02-02 | 2026-02-04 | 177 |
| 184 | 1.3.1.1.9.2 | Compra materiales y Fabricación | 4d | 2026-02-02 | 2026-02-06 | 183SS |
| 185 | 1.3.1.1.10 | Entrega Estructura metálica | 2d | 2026-03-04 | 2026-03-06 | 189FS-104000h |
| 186 | 1.3.1.1.11 | **Llegada Cerchas/Vigas Metálicas** | 1d | 2026-02-23 | 2026-02-24 | 50FS+1d |
| 187 | 1.3.1.1.11.1 | Llegada Cerchas/Vigas Metálicas | 1d | 2026-02-10 | 2026-02-11 | 197FS+1d |
| 188 | 1.3.1.1.11.2 | Entrega Estructura metálica | 2d | 2026-02-13 | 2026-02-16 | 198FS-104000h |
| 189 | 1.3.1.1.12 | Instalación Cerchas/Vigas Metálicas h:3.50 - 3.60 | 8d | 2026-02-26 | 2026-03-09 | 186, 160FS-104000h |
| 190 | 1.3.1.2 | Replanteo Columnas | 2d | 2026-03-16 | 2026-03-18 | 14 |
| 191 | 1.3.1.3 | Llegada Cerchas/Vigas Metálicas | 1d | 2026-03-25 | 2026-03-26 | 196FS+1d |
| 192 | 1.3.1.4 | Instalación Columnas | 3d | 2026-03-24 | 2026-03-27 | 196 |
| 193 | 1.3.1.5 | Instalación Cerchas/Metálicas h:3.50 - 3.60 | 3d | 2026-03-26 | 2026-03-31 | 191, 192FS-104000h |
| 194 | 1.3.1.6 | Entrega Estructura metálica | 2d | 2026-03-28 | 2026-03-31 | 193FS-104000h |

| ID | WBS | Task | Duration | Start | Finish | Predecessors |
| --- | --- | --- | --- | --- | --- | --- |
| 195 | 2 | **FIN DE OBRA** | 0d | 2026-04-07 | 2026-04-07 |  |
| 196 | 2.1 | **Llegada Columnas Metálicas** | 1d | 2026-03-21 | 2026-03-24 | 200FS+1d |
| 197 | 2.1.1 | Llegada Columnas Metálicas | 1d | 2026-02-07 | 2026-02-09 |  |
| 198 | 2.1.2 | Instalación Cerchas/Metálicas h:3.50 - 3.60 | 3d | 2026-02-11 | 2026-02-16 | 58FS-104000h |
| 199 | 2.2 | **Nivel Intermedio** | 11.5d | 2026-03-16 | 2026-03-31 |  |
| 200 | 2.2.1 | Compra materiales y Fabricación | 4d | 2026-03-16 | 2026-03-20 |  |
