| UID | ID | Name | Type | IsNull | CreateDate | WBS | OutlineNumber | OutlineLevel | Priority | Start | Finish | Duration | DurationFormat | Resume | ResumeValid | EffortDriven | Recurring | OverAllocated | Estimated | Milestone | Summary | Critical | IsSubproject | IsSubprojectReadOnly | ExternalTask | FixedCostAccrual | PercentComplete | PercentWorkComplete | RemainingDuration | ConstraintType | CalendarUID | ConstraintDate | LevelAssignments | LevelingCanSplit | LevelingDelay | LevelingDelayFormat | IgnoreResourceCalendar | HideBar | Rollup | EarnedValueMethod | Active | Manual | id | name | start | finish | duration | percentComplete | isSummary | outlineLevel | wbs | isMilestone | predecessors |
| --- | --- | --- | --- | --- | --- | --- | --- | --- | --- | --- | --- | --- | --- | --- | --- | --- | --- | --- | --- | --- | --- | --- | --- | --- | --- | --- | --- | --- | --- | --- | --- | --- | --- | --- | --- | --- | --- | --- | --- | --- | --- | --- | --- | --- | --- | --- | --- | --- | --- | --- | --- | --- | --- |
| 1 | 1 | Estructura Confinamiento Muros Estación 2 | 1 | 0 | 2025-11-19T03:16:00 | 1 | 1 | 1 | 500 | 2025-11-19T09:00:00 | 2026-03-31T14:00:00 | PT792H0M0S | 7 | 2025-11-19T09:00:00 | 0 | 1 | 0 | 0 | 0 | 0 | 1 | 0 | 0 | 0 | 0 | 3 | 0 | 0 | PT792H0M0S | 0 | -1 | 1970-01-01T00:00:00 | 0 | 0 | 0 | 8 | 0 | 0 | 0 | 0 | 1 | 0 | 1 | Estructura Confinamiento Muros Estación 2 | 2025-11-19T09:00:00 | 2026-03-31T14:00:00 | PT792H0M0S | 0 | True | 1 | 1 |  |  |
| 2 | 2 | Acta Inicio | 0 | 0 | 2025-11-28T03:14:00 | 1.1 | 1.1 | 2 | 500 | 2025-11-19T09:00:00 | 2025-11-24T09:00:00 | PT0H0M0S | 7 | 2025-11-19T09:00:00 | 0 | 1 | 0 | 0 | 0 | 1 | 0 | 1 | 0 | 0 | 0 | 3 | 0 | 0 |  | 0 | -1 | 1970-01-01T00:00:00 | 0 | 0 | 0 | 8 | 0 | 0 | 0 | 0 | 1 | 0 | 2 | Acta Inicio | 2025-11-19T09:00:00 | 2025-11-24T09:00:00 | PT0H0M0S | 0 |  | 2 | 1.1 | True |  |
| 3 | 3 | Nave Central | 1 | 0 | 2025-11-19T03:16:00 | 1.2 | 1.2 | 2 | 500 | 2025-11-19T09:00:00 | 2026-03-31T14:00:00 | PT792H0M0S | 7 | 2025-11-19T09:00:00 | 0 | 1 | 0 | 0 | 0 | 0 | 1 | 1 | 0 | 0 | 0 | 3 | 0 | 0 | PT792H0M0S | 0 | -1 | 1970-01-01T00:00:00 | 0 | 0 | 0 | 8 | 0 | 0 | 0 | 0 | 1 | 0 | 3 | Nave Central | 2025-11-19T09:00:00 | 2026-03-31T14:00:00 | PT792H0M0S | 0 | True | 2 | 1.2 |  |  |
| 4 | 4 | Nivel Intermedio | 1 | 0 | 2025-11-19T03:17:00 | 1.2.1 | 1.2.1 | 3 | 500 | 2025-11-19T09:00:00 | 2026-03-31T14:00:00 | PT792H0M0S | 7 | 2025-11-19T09:00:00 | 0 | 1 | 0 | 0 | 0 | 0 | 1 | 0 | 0 | 0 | 0 | 3 | 0 | 0 | PT792H0M0S | 0 | -1 | 1970-01-01T00:00:00 | 0 | 0 | 0 | 8 | 0 | 0 | 0 | 0 | 1 | 0 | 4 | Nivel Intermedio | 2025-11-19T09:00:00 | 2026-03-31T14:00:00 | PT792H0M0S | 0 | True | 3 | 1.2.1 |  |  |
| 5 | 5 | Cuartos T02-T23 | 1 | 0 | 2025-11-19T03:19:00 | 1.2.1.1 | 1.2.1.1 | 4 | 500 | 2025-11-19T09:00:00 | 2025-12-03T14:00:00 | PT92H0M0S | 7 | 2025-11-19T09:00:00 | 0 | 1 | 0 | 0 | 0 | 0 | 1 | 1 | 0 | 0 | 0 | 3 | 0 | 0 | PT92H0M0S | 0 | -1 | 1970-01-01T00:00:00 | 0 | 0 | 0 | 8 | 0 | 0 | 0 | 0 | 1 | 0 | 5 | Cuartos T02-T23 | 2025-11-19T09:00:00 | 2025-12-03T14:00:00 | PT92H0M0S | 0 | True | 4 | 1.2.1.1 |  |  |
| 6 | 6 | Replanteo Columnas | 0 | 0 | 2025-11-19T03:26:00 | 1.2.1.1.1 | 1.2.1.1.1 | 5 | 500 | 2025-11-24T09:00:00 | 2025-11-26T09:00:00 | PT16H0M0S | 7 | 2025-11-24T09:00:00 | 0 | 1 | 0 | 0 | 0 | 0 | 0 | 1 | 0 | 0 | 0 | 3 | 0 | 0 | PT16H0M0S | 0 | -1 | 1970-01-01T00:00:00 | 0 | 0 | 0 | 8 | 0 | 0 | 0 | 0 | 1 | 0 | 6 | Replanteo Columnas | 2025-11-24T09:00:00 | 2025-11-26T09:00:00 | PT16H0M0S | 0 |  | 5 | 1.2.1.1.1 |  | 2 |
| 7 | 7 | Compra materiales y Fabricación | 0 | 0 | 2025-11-28T03:15:00 | 1.2.1.1.2 | 1.2.1.1.2 | 5 | 500 | 2025-11-24T09:00:00 | 2025-11-28T09:00:00 | PT32H0M0S | 7 | 2025-11-24T09:00:00 | 0 | 1 | 0 | 0 | 0 | 0 | 0 | 1 | 0 | 0 | 0 | 3 | 0 | 0 | PT32H0M0S | 0 | -1 | 1970-01-01T00:00:00 | 0 | 0 | 0 | 8 | 0 | 0 | 0 | 0 | 1 | 0 | 7 | Compra materiales y Fabricación | 2025-11-24T09:00:00 | 2025-11-28T09:00:00 | PT32H0M0S | 0 |  | 5 | 1.2.1.1.2 |  | 6 |
| 8 | 8 | Llegada Columnas Metálicas | 0 | 0 | 2025-11-19T03:25:00 | 1.2.1.1.3 | 1.2.1.1.3 | 5 | 500 | 2025-11-28T09:00:00 | 2025-11-29T09:00:00 | PT8H0M0S | 7 | 2025-11-28T09:00:00 | 0 | 1 | 0 | 0 | 0 | 0 | 0 | 1 | 0 | 0 | 0 | 3 | 0 | 0 | PT8H0M0S | 0 | -1 | 1970-01-01T00:00:00 | 0 | 0 | 0 | 8 | 0 | 0 | 0 | 0 | 1 | 0 | 8 | Llegada Columnas Metálicas | 2025-11-28T09:00:00 | 2025-11-29T09:00:00 | PT8H0M0S | 0 |  | 5 | 1.2.1.1.3 |  | 7 |
| 9 | 9 | Llegada Cerchas/Vigas Metálicas | 0 | 0 | 2025-11-19T03:25:00 | 1.2.1.1.4 | 1.2.1.1.4 | 5 | 500 | 2025-12-01T14:00:00 | 2025-12-02T14:00:00 | PT8H0M0S | 7 | 2025-12-01T14:00:00 | 0 | 1 | 0 | 0 | 0 | 0 | 0 | 1 | 0 | 0 | 0 | 3 | 0 | 0 | PT8H0M0S | 0 | -1 | 1970-01-01T00:00:00 | 0 | 0 | 0 | 8 | 0 | 0 | 0 | 0 | 1 | 0 | 9 | Llegada Cerchas/Vigas Metálicas | 2025-12-01T14:00:00 | 2025-12-02T14:00:00 | PT8H0M0S | 0 |  | 5 | 1.2.1.1.4 |  | 8 |
| 10 | 10 | Instalación Columnas | 0 | 0 | 2025-11-19T03:27:00 | 1.2.1.1.5 | 1.2.1.1.5 | 5 | 500 | 2025-11-29T09:00:00 | 2025-12-02T14:00:00 | PT16H0M0S | 7 | 2025-11-29T09:00:00 | 0 | 1 | 0 | 0 | 0 | 0 | 0 | 1 | 0 | 0 | 0 | 3 | 0 | 0 | PT16H0M0S | 0 | -1 | 1970-01-01T00:00:00 | 0 | 0 | 0 | 8 | 0 | 0 | 0 | 0 | 1 | 0 | 10 | Instalación Columnas | 2025-11-29T09:00:00 | 2025-12-02T14:00:00 | PT16H0M0S | 0 |  | 5 | 1.2.1.1.5 |  | 8 |
| 11 | 11 | Instalación Cerchas/Metálicas h:3.50 - 3.60 | 0 | 0 | 2025-11-19T03:28:00 | 1.2.1.1.6 | 1.2.1.1.6 | 5 | 500 | 2025-12-02T14:00:00 | 2025-12-05T14:00:00 | PT24H0M0S | 7 | 2025-12-02T14:00:00 | 0 | 1 | 0 | 0 | 0 | 0 | 0 | 1 | 0 | 0 | 0 | 3 | 0 | 0 | PT24H0M0S | 0 | -1 | 1970-01-01T00:00:00 | 0 | 0 | 0 | 8 | 0 | 0 | 0 | 0 | 1 | 0 | 11 | Instalación Cerchas/Metálicas h:3.50 - 3.60 | 2025-12-02T14:00:00 | 2025-12-05T14:00:00 | PT24H0M0S | 0 |  | 5 | 1.2.1.1.6 |  | 9, 10 |
| 12 | 12 | Entrega Estructura metálica | 0 | 0 | 2025-11-19T03:29:00 | 1.2.1.1.7 | 1.2.1.1.7 | 5 | 500 | 2025-12-02T14:00:00 | 2025-12-04T14:00:00 | PT16H0M0S | 7 | 2025-12-02T14:00:00 | 0 | 1 | 0 | 0 | 0 | 0 | 0 | 1 | 0 | 0 | 0 | 3 | 0 | 0 | PT16H0M0S | 0 | -1 | 1970-01-01T00:00:00 | 0 | 0 | 0 | 8 | 0 | 0 | 0 | 0 | 1 | 0 | 12 | Entrega Estructura metálica | 2025-12-02T14:00:00 | 2025-12-04T14:00:00 | PT16H0M0S | 0 |  | 5 | 1.2.1.1.7 |  | 10, 11 |
| 13 | 13 | Cuarto T03 | 1 | 0 | 2025-11-28T03:13:00 | 1.2.1.1.8 | 1.2.1.1.8 | 5 | 500 | 2025-11-19T09:00:00 | 2025-12-03T14:00:00 | PT92H0M0S | 7 | 2025-11-19T09:00:00 | 0 | 1 | 0 | 0 | 0 | 0 | 0 | 1 | 0 | 0 | 0 | 3 | 0 | 0 | PT92H0M0S | 0 | -1 | 1970-01-01T00:00:00 | 0 | 0 | 0 | 8 | 0 | 0 | 0 | 0 | 1 | 0 | 13 | Cuarto T03 | 2025-11-19T09:00:00 | 2025-12-03T14:00:00 | PT92H0M0S | 0 |  | 5 | 1.2.1.1.8 |  |  |
| 14 | 14 | Replanteo Columnas | 0 | 0 | 2026-01-22T03:41:00 | 1.2.1.1.9 | 1.2.1.1.9 | 5 | 500 | 2026-03-12T14:00:00 | 2026-03-16T09:00:00 | PT16H0M0S | 7 |  | 0 | 1 | 0 | 0 | 0 | 0 | 1 | 1 | 0 | 0 | 0 | 3 | 0 | 0 | PT16H0M0S | 0 | -1 | 1970-01-01T00:00:00 | 0 | 0 | 0 | 8 | 0 | 0 | 0 | 0 | 1 | 0 | 14 | Replanteo Columnas | 2026-03-12T14:00:00 | 2026-03-16T09:00:00 | PT16H0M0S | 0 | True | 5 | 1.2.1.1.9 |  | 102 |
| 15 | 15 | Replanteo Columnas | 0 | 0 | 2025-11-28T03:13:00 | 1.2.1.1.9.1 | 1.2.1.1.9.1 | 6 | 500 | 2025-11-24T09:00:00 | 2025-11-26T09:00:00 | PT16H0M0S | 7 | 2025-11-24T09:00:00 | 0 | 1 | 0 | 0 | 0 | 0 | 0 | 1 | 0 | 0 | 0 | 3 | 0 | 0 | PT16H0M0S | 0 | -1 | 1970-01-01T00:00:00 | 0 | 0 | 0 | 8 | 0 | 0 | 0 | 0 | 1 | 0 | 15 | Replanteo Columnas | 2025-11-24T09:00:00 | 2025-11-26T09:00:00 | PT16H0M0S | 0 |  | 6 | 1.2.1.1.9.1 |  | 2 |
| 16 | 16 | Compra materiales y Fabricación | 0 | 0 | 2025-11-28T03:28:00 | 1.2.1.1.9.2 | 1.2.1.1.9.2 | 6 | 500 | 2025-11-24T09:00:00 | 2025-11-28T09:00:00 | PT32H0M0S | 7 | 2025-11-24T09:00:00 | 0 | 1 | 0 | 0 | 0 | 0 | 0 | 1 | 0 | 0 | 0 | 3 | 0 | 0 | PT32H0M0S | 0 | -1 | 1970-01-01T00:00:00 | 0 | 0 | 0 | 8 | 0 | 0 | 0 | 0 | 1 | 0 | 16 | Compra materiales y Fabricación | 2025-11-24T09:00:00 | 2025-11-28T09:00:00 | PT32H0M0S | 0 |  | 6 | 1.2.1.1.9.2 |  | 15 |
| 17 | 17 | Llegada Columnas Metálicas | 0 | 0 | 2025-11-28T03:13:00 | 1.2.1.1.9.3 | 1.2.1.1.9.3 | 6 | 500 | 2025-11-29T09:00:00 | 2025-12-01T14:00:00 | PT8H0M0S | 7 | 2025-11-29T09:00:00 | 0 | 1 | 0 | 0 | 0 | 0 | 0 | 1 | 0 | 0 | 0 | 3 | 0 | 0 | PT8H0M0S | 0 | -1 | 1970-01-01T00:00:00 | 0 | 0 | 0 | 8 | 0 | 0 | 0 | 0 | 1 | 0 | 17 | Llegada Columnas Metálicas | 2025-11-29T09:00:00 | 2025-12-01T14:00:00 | PT8H0M0S | 0 |  | 6 | 1.2.1.1.9.3 |  | 16 |
| 18 | 18 | Llegada Cerchas/Vigas Metálicas | 0 | 0 | 2025-11-28T03:13:00 | 1.2.1.1.9.4 | 1.2.1.1.9.4 | 6 | 500 | 2025-12-02T14:00:00 | 2025-12-03T14:00:00 | PT8H0M0S | 7 |  | 0 | 1 | 0 | 0 | 0 | 0 | 0 | 1 | 0 | 0 | 0 | 3 | 0 | 0 | PT8H0M0S | 0 | -1 | 1970-01-01T00:00:00 | 0 | 0 | 0 | 8 | 0 | 0 | 0 | 0 | 1 | 0 | 18 | Llegada Cerchas/Vigas Metálicas | 2025-12-02T14:00:00 | 2025-12-03T14:00:00 | PT8H0M0S | 0 |  | 6 | 1.2.1.1.9.4 |  | 17 |
| 19 | 19 | Instalación Columnas | 0 | 0 | 2025-11-28T03:13:00 | 1.2.1.1.9.5 | 1.2.1.1.9.5 | 6 | 500 | 2025-12-01T14:00:00 | 2025-12-03T14:00:00 | PT16H0M0S | 7 | 2025-12-01T14:00:00 | 0 | 1 | 0 | 0 | 0 | 0 | 0 | 1 | 0 | 0 | 0 | 3 | 0 | 0 | PT16H0M0S | 0 | -1 | 1970-01-01T00:00:00 | 0 | 0 | 0 | 8 | 0 | 0 | 0 | 0 | 1 | 0 | 19 | Instalación Columnas | 2025-12-01T14:00:00 | 2025-12-03T14:00:00 | PT16H0M0S | 0 |  | 6 | 1.2.1.1.9.5 |  | 17 |
| 20 | 20 | Instalación Cerchas/Metálicas h:3.50 - 3.60 | 0 | 0 | 2025-11-28T03:13:00 | 1.2.1.1.9.6 | 1.2.1.1.9.6 | 6 | 500 | 2025-12-03T14:00:00 | 2025-12-09T09:00:00 | PT24H0M0S | 7 |  | 0 | 1 | 0 | 0 | 0 | 0 | 0 | 1 | 0 | 0 | 0 | 3 | 0 | 0 | PT24H0M0S | 0 | -1 | 1970-01-01T00:00:00 | 0 | 0 | 0 | 8 | 0 | 0 | 0 | 0 | 1 | 0 | 20 | Instalación Cerchas/Metálicas h:3.50 - 3.60 | 2025-12-03T14:00:00 | 2025-12-09T09:00:00 | PT24H0M0S | 0 |  | 6 | 1.2.1.1.9.6 |  | 18, 19 |
| 21 | 21 | Entrega Estructura metálica | 0 | 0 | 2025-11-28T03:13:00 | 1.2.1.1.9.7 | 1.2.1.1.9.7 | 6 | 500 | 2025-12-05T09:00:00 | 2025-12-09T14:00:00 | PT16H0M0S | 7 |  | 0 | 1 | 0 | 0 | 0 | 0 | 0 | 1 | 0 | 0 | 0 | 3 | 0 | 0 | PT16H0M0S | 0 | -1 | 1970-01-01T00:00:00 | 0 | 0 | 0 | 8 | 0 | 0 | 0 | 0 | 1 | 0 | 21 | Entrega Estructura metálica | 2025-12-05T09:00:00 | 2025-12-09T14:00:00 | PT16H0M0S | 0 |  | 6 | 1.2.1.1.9.7 |  | 20 |
| 22 | 22 | Cuartos T11-T12-T22 | 1 | 0 | 2025-11-19T03:29:00 | 1.2.1.2 | 1.2.1.2 | 4 | 500 | 2025-11-19T09:00:00 | 2025-12-25T09:00:00 | PT220H0M0S | 7 | 2025-11-19T09:00:00 | 0 | 1 | 0 | 0 | 0 | 0 | 1 | 1 | 0 | 0 | 0 | 3 | 0 | 0 | PT220H0M0S | 0 | -1 | 1970-01-01T00:00:00 | 0 | 0 | 0 | 8 | 0 | 0 | 0 | 0 | 1 | 0 | 22 | Cuartos T11-T12-T22 | 2025-11-19T09:00:00 | 2025-12-25T09:00:00 | PT220H0M0S | 0 | True | 4 | 1.2.1.2 |  |  |
| 23 | 23 | Replanteo Columnas | 0 | 0 | 2025-11-19T03:29:00 | 1.2.1.2.1 | 1.2.1.2.1 | 5 | 500 | 2025-12-03T14:00:00 | 2025-12-05T14:00:00 | PT16H0M0S | 7 | 2025-12-03T14:00:00 | 0 | 1 | 0 | 0 | 0 | 0 | 0 | 1 | 0 | 0 | 0 | 3 | 0 | 0 | PT16H0M0S | 0 | -1 | 1970-01-01T00:00:00 | 0 | 0 | 0 | 8 | 0 | 0 | 0 | 0 | 1 | 0 | 23 | Replanteo Columnas | 2025-12-03T14:00:00 | 2025-12-05T14:00:00 | PT16H0M0S | 0 |  | 5 | 1.2.1.2.1 |  | 19 |
| 24 | 24 | Compra materiales y Fabricación | 0 | 0 | 2025-12-01T10:07:00 | 1.2.1.2.2 | 1.2.1.2.2 | 5 | 500 | 2025-12-03T14:00:00 | 2025-12-12T09:00:00 | PT48H0M0S | 7 | 2025-12-03T14:00:00 | 0 | 1 | 0 | 0 | 0 | 0 | 0 | 1 | 0 | 0 | 0 | 3 | 0 | 0 | PT48H0M0S | 0 | -1 | 1970-01-01T00:00:00 | 0 | 0 | 0 | 8 | 0 | 0 | 0 | 0 | 1 | 0 | 24 | Compra materiales y Fabricación | 2025-12-03T14:00:00 | 2025-12-12T09:00:00 | PT48H0M0S | 0 |  | 5 | 1.2.1.2.2 |  | 23 |
| 25 | 25 | Cuartos Ejes 7 - 9 | 1 | 0 | 2025-12-01T10:40:00 | 1.2.1.2.3 | 1.2.1.2.3 | 5 | 500 | 2025-11-19T09:00:00 | 2025-12-08T14:00:00 | PT120H0M0S | 7 | 2025-11-19T09:00:00 | 0 | 1 | 0 | 0 | 0 | 0 | 0 | 1 | 0 | 0 | 0 | 3 | 0 | 0 | PT120H0M0S | 0 | -1 | 1970-01-01T00:00:00 | 0 | 0 | 0 | 8 | 0 | 0 | 0 | 0 | 1 | 0 | 25 | Cuartos Ejes 7 - 9 | 2025-11-19T09:00:00 | 2025-12-08T14:00:00 | PT120H0M0S | 0 |  | 5 | 1.2.1.2.3 |  |  |
| 26 | 26 | Llegada Columnas Metálicas | 0 | 0 | 2025-11-19T03:29:00 | 1.2.1.2.4 | 1.2.1.2.4 | 5 | 500 | 2025-12-13T09:00:00 | 2025-12-15T14:00:00 | PT8H0M0S | 7 | 2025-12-13T09:00:00 | 0 | 1 | 0 | 0 | 0 | 0 | 0 | 1 | 0 | 0 | 0 | 3 | 0 | 0 | PT8H0M0S | 0 | -1 | 1970-01-01T00:00:00 | 0 | 0 | 0 | 8 | 0 | 0 | 0 | 0 | 1 | 0 | 26 | Llegada Columnas Metálicas | 2025-12-13T09:00:00 | 2025-12-15T14:00:00 | PT8H0M0S | 0 |  | 5 | 1.2.1.2.4 |  | 24 |
| 27 | 27 | Llegada Cerchas/Vigas Metálicas | 0 | 0 | 2025-11-19T03:29:00 | 1.2.1.2.5 | 1.2.1.2.5 | 5 | 500 | 2025-12-16T14:00:00 | 2025-12-18T14:00:00 | PT16H0M0S | 7 | 2025-12-16T14:00:00 | 0 | 1 | 0 | 0 | 0 | 0 | 0 | 1 | 0 | 0 | 0 | 3 | 0 | 0 | PT16H0M0S | 0 | -1 | 1970-01-01T00:00:00 | 0 | 0 | 0 | 8 | 0 | 0 | 0 | 0 | 1 | 0 | 27 | Llegada Cerchas/Vigas Metálicas | 2025-12-16T14:00:00 | 2025-12-18T14:00:00 | PT16H0M0S | 0 |  | 5 | 1.2.1.2.5 |  | 26 |
| 28 | 28 | Instalación Columnas | 0 | 0 | 2025-11-19T03:29:00 | 1.2.1.2.6 | 1.2.1.2.6 | 5 | 500 | 2025-12-15T14:00:00 | 2025-12-22T09:00:00 | PT40H0M0S | 7 | 2025-12-15T14:00:00 | 0 | 1 | 0 | 0 | 0 | 0 | 0 | 1 | 0 | 0 | 0 | 3 | 0 | 0 | PT40H0M0S | 0 | -1 | 1970-01-01T00:00:00 | 0 | 0 | 0 | 8 | 0 | 0 | 0 | 0 | 1 | 0 | 28 | Instalación Columnas | 2025-12-15T14:00:00 | 2025-12-22T09:00:00 | PT40H0M0S | 0 |  | 5 | 1.2.1.2.6 |  | 26 |
| 29 | 29 | Instalación Cerchas/Metálicas h:3.50 - 3.60 | 0 | 0 | 2025-11-19T03:29:00 | 1.2.1.2.7 | 1.2.1.2.7 | 5 | 500 | 2025-12-18T14:00:00 | 2025-12-25T09:00:00 | PT40H0M0S | 7 | 2025-12-18T14:00:00 | 0 | 1 | 0 | 0 | 0 | 0 | 0 | 1 | 0 | 0 | 0 | 3 | 0 | 0 | PT40H0M0S | 0 | -1 | 1970-01-01T00:00:00 | 0 | 0 | 0 | 8 | 0 | 0 | 0 | 0 | 1 | 0 | 29 | Instalación Cerchas/Metálicas h:3.50 - 3.60 | 2025-12-18T14:00:00 | 2025-12-25T09:00:00 | PT40H0M0S | 0 |  | 5 | 1.2.1.2.7 |  | 27, 28 |
| 30 | 30 | Entrega Estructura metálica | 0 | 0 | 2025-11-19T03:29:00 | 1.2.1.2.8 | 1.2.1.2.8 | 5 | 500 | 2025-11-19T09:00:00 | 2025-11-21T09:00:00 | PT16H0M0S | 7 | 2025-11-19T09:00:00 | 0 | 1 | 0 | 0 | 0 | 0 | 0 | 1 | 0 | 0 | 0 | 3 | 0 | 0 | PT16H0M0S | 0 | -1 | 1970-01-01T00:00:00 | 0 | 0 | 0 | 8 | 0 | 0 | 0 | 0 | 1 | 0 | 30 | Entrega Estructura metálica | 2025-11-19T09:00:00 | 2025-11-21T09:00:00 | PT16H0M0S | 0 |  | 5 | 1.2.1.2.8 |  | 29 |
| 31 | 31 | Cuartos T06 | 1 | 0 | 2025-12-01T10:07:00 | 1.2.1.2.9 | 1.2.1.2.9 | 5 | 500 | 2025-11-19T09:00:00 | 2025-12-17T14:00:00 | PT172H0M0S | 7 | 2025-11-19T09:00:00 | 0 | 1 | 0 | 0 | 0 | 0 | 1 | 1 | 0 | 0 | 0 | 3 | 0 | 0 | PT172H0M0S | 0 | -1 | 1970-01-01T00:00:00 | 0 | 0 | 0 | 8 | 0 | 0 | 0 | 0 | 1 | 0 | 31 | Cuartos T06 | 2025-11-19T09:00:00 | 2025-12-17T14:00:00 | PT172H0M0S | 0 | True | 5 | 1.2.1.2.9 |  |  |
| 32 | 32 | Replanteo Columnas | 0 | 0 | 2025-12-01T10:07:00 | 1.2.1.2.9.1 | 1.2.1.2.9.1 | 6 | 500 | 2025-12-03T14:00:00 | 2025-12-05T14:00:00 | PT16H0M0S | 7 | 2025-12-03T14:00:00 | 0 | 1 | 0 | 0 | 0 | 0 | 0 | 1 | 0 | 0 | 0 | 3 | 0 | 0 | PT16H0M0S | 0 | -1 | 1970-01-01T00:00:00 | 0 | 0 | 0 | 8 | 0 | 0 | 0 | 0 | 1 | 0 | 32 | Replanteo Columnas | 2025-12-03T14:00:00 | 2025-12-05T14:00:00 | PT16H0M0S | 0 |  | 6 | 1.2.1.2.9.1 |  | 19 |
| 33 | 33 | Compra materiales y Fabricación | 0 | 0 | 2025-12-01T10:07:00 | 1.2.1.2.9.2 | 1.2.1.2.9.2 | 6 | 500 | 2025-12-03T14:00:00 | 2025-12-09T09:00:00 | PT32H0M0S | 7 | 2025-12-03T14:00:00 | 0 | 1 | 0 | 0 | 0 | 0 | 0 | 1 | 0 | 0 | 0 | 3 | 0 | 0 | PT32H0M0S | 0 | -1 | 1970-01-01T00:00:00 | 0 | 0 | 0 | 8 | 0 | 0 | 0 | 0 | 1 | 0 | 33 | Compra materiales y Fabricación | 2025-12-03T14:00:00 | 2025-12-09T09:00:00 | PT32H0M0S | 0 |  | 6 | 1.2.1.2.9.2 |  | 32 |
| 34 | 34 | Llegada Columnas Metálicas | 0 | 0 | 2025-12-01T10:07:00 | 1.2.1.2.9.3 | 1.2.1.2.9.3 | 6 | 500 | 2025-12-10T09:00:00 | 2025-12-11T09:00:00 | PT8H0M0S | 7 | 2025-12-10T09:00:00 | 0 | 1 | 0 | 0 | 0 | 0 | 0 | 1 | 0 | 0 | 0 | 3 | 0 | 0 | PT8H0M0S | 0 | -1 | 1970-01-01T00:00:00 | 0 | 0 | 0 | 8 | 0 | 0 | 0 | 0 | 1 | 0 | 34 | Llegada Columnas Metálicas | 2025-12-10T09:00:00 | 2025-12-11T09:00:00 | PT8H0M0S | 0 |  | 6 | 1.2.1.2.9.3 |  | 33 |
| 35 | 35 | Llegada Cerchas/Vigas Metálicas | 0 | 0 | 2025-12-01T10:07:00 | 1.2.1.2.9.4 | 1.2.1.2.9.4 | 6 | 500 | 2025-12-12T09:00:00 | 2025-12-13T09:00:00 | PT8H0M0S | 7 | 2025-12-12T09:00:00 | 0 | 1 | 0 | 0 | 0 | 0 | 0 | 1 | 0 | 0 | 0 | 3 | 0 | 0 | PT8H0M0S | 0 | -1 | 1970-01-01T00:00:00 | 0 | 0 | 0 | 8 | 0 | 0 | 0 | 0 | 1 | 0 | 35 | Llegada Cerchas/Vigas Metálicas | 2025-12-12T09:00:00 | 2025-12-13T09:00:00 | PT8H0M0S | 0 |  | 6 | 1.2.1.2.9.4 |  | 34 |
| 36 | 36 | Instalación Columnas | 0 | 0 | 2025-12-01T10:07:00 | 1.2.1.2.9.5 | 1.2.1.2.9.5 | 6 | 500 | 2025-12-11T09:00:00 | 2025-12-13T09:00:00 | PT16H0M0S | 7 | 2025-12-11T09:00:00 | 0 | 1 | 0 | 0 | 0 | 0 | 0 | 1 | 0 | 0 | 0 | 3 | 0 | 0 | PT16H0M0S | 0 | -1 | 1970-01-01T00:00:00 | 0 | 0 | 0 | 8 | 0 | 0 | 0 | 0 | 1 | 0 | 36 | Instalación Columnas | 2025-12-11T09:00:00 | 2025-12-13T09:00:00 | PT16H0M0S | 0 |  | 6 | 1.2.1.2.9.5 |  | 34 |
| 37 | 37 | Instalación Cerchas/Metálicas h:3.50 - 3.60 | 0 | 0 | 2025-12-01T10:10:00 | 1.2.1.2.9.6 | 1.2.1.2.9.6 | 6 | 500 | 2025-12-13T09:00:00 | 2025-12-17T14:00:00 | PT24H0M0S | 7 | 2025-12-13T09:00:00 | 0 | 1 | 0 | 0 | 0 | 0 | 0 | 1 | 0 | 0 | 0 | 3 | 0 | 0 | PT24H0M0S | 0 | -1 | 1970-01-01T00:00:00 | 0 | 0 | 0 | 8 | 0 | 0 | 0 | 0 | 1 | 0 | 37 | Instalación Cerchas/Metálicas h:3.50 - 3.60 | 2025-12-13T09:00:00 | 2025-12-17T14:00:00 | PT24H0M0S | 0 |  | 6 | 1.2.1.2.9.6 |  | 35, 36 |
| 38 | 38 | Entrega Estructura metálica | 0 | 0 | 2025-12-01T10:07:00 | 1.2.1.2.9.7 | 1.2.1.2.9.7 | 6 | 500 | 2025-11-19T09:00:00 | 2025-11-21T09:00:00 | PT16H0M0S | 7 | 2025-11-19T09:00:00 | 0 | 1 | 0 | 0 | 0 | 0 | 0 | 1 | 0 | 0 | 0 | 3 | 0 | 0 | PT16H0M0S | 0 | -1 | 1970-01-01T00:00:00 | 0 | 0 | 0 | 8 | 0 | 0 | 0 | 0 | 1 | 0 | 38 | Entrega Estructura metálica | 2025-11-19T09:00:00 | 2025-11-21T09:00:00 | PT16H0M0S | 0 |  | 6 | 1.2.1.2.9.7 |  | 37 |
| 39 | 39 | Cuartos Ejes 7 - 9 --- A-D' (Zona 6) | 1 | 0 | 2025-11-19T03:39:00 | 1.2.1.3 | 1.2.1.3 | 4 | 500 | 2025-11-19T09:00:00 | 2025-12-29T09:00:00 | PT240H0M0S | 7 | 2025-11-19T09:00:00 | 0 | 1 | 0 | 0 | 0 | 0 | 1 | 1 | 0 | 0 | 0 | 3 | 0 | 0 | PT240H0M0S | 0 | -1 | 1970-01-01T00:00:00 | 0 | 0 | 0 | 8 | 0 | 0 | 0 | 0 | 1 | 0 | 39 | Cuartos Ejes 7 - 9 --- A-D' (Zona 6) | 2025-11-19T09:00:00 | 2025-12-29T09:00:00 | PT240H0M0S | 0 | True | 4 | 1.2.1.3 |  |  |
| 40 | 40 | Replanteo Columnas | 0 | 0 | 2025-12-01T10:41:00 | 1.2.1.3.1 | 1.2.1.3.1 | 5 | 500 | 2025-12-13T09:00:00 | 2025-12-16T14:00:00 | PT16H0M0S | 7 | 2025-12-13T09:00:00 | 0 | 1 | 0 | 0 | 0 | 0 | 0 | 1 | 0 | 0 | 0 | 3 | 0 | 0 | PT16H0M0S | 0 | -1 | 1970-01-01T00:00:00 | 0 | 0 | 0 | 8 | 0 | 0 | 0 | 0 | 1 | 0 | 40 | Replanteo Columnas | 2025-12-13T09:00:00 | 2025-12-16T14:00:00 | PT16H0M0S | 0 |  | 5 | 1.2.1.3.1 |  | 36 |
| 41 | 41 | Compra materiales y Fabricación | 0 | 0 | 2025-11-19T03:39:00 | 1.2.1.3.2 | 1.2.1.3.2 | 5 | 500 | 2025-12-13T09:00:00 | 2025-12-23T09:00:00 | PT56H0M0S | 7 | 2025-12-13T09:00:00 | 0 | 1 | 0 | 0 | 0 | 0 | 0 | 1 | 0 | 0 | 0 | 3 | 0 | 0 | PT56H0M0S | 0 | -1 | 1970-01-01T00:00:00 | 0 | 0 | 0 | 8 | 0 | 0 | 0 | 0 | 1 | 0 | 41 | Compra materiales y Fabricación | 2025-12-13T09:00:00 | 2025-12-23T09:00:00 | PT56H0M0S | 0 |  | 5 | 1.2.1.3.2 |  | 40 |
| 42 | 42 | Llegada Cerchas/Vigas Metálicas | 0 | 0 | 2025-11-19T03:39:00 | 1.2.1.3.3 | 1.2.1.3.3 | 5 | 500 | 2025-12-27T09:00:00 | 2025-12-30T14:00:00 | PT16H0M0S | 7 | 2025-12-27T09:00:00 | 0 | 1 | 0 | 0 | 0 | 0 | 0 | 1 | 0 | 0 | 0 | 3 | 0 | 0 | PT16H0M0S | 0 | -1 | 1970-01-01T00:00:00 | 0 | 0 | 0 | 8 | 0 | 0 | 0 | 0 | 1 | 0 | 42 | Llegada Cerchas/Vigas Metálicas | 2025-12-27T09:00:00 | 2025-12-30T14:00:00 | PT16H0M0S | 0 |  | 5 | 1.2.1.3.3 |  | 43 |
| 43 | 43 | Llegada Columnas Metálicas | 0 | 0 | 2025-11-19T03:39:00 | 1.2.1.3.4 | 1.2.1.3.4 | 5 | 500 | 2025-12-24T09:00:00 | 2025-12-26T09:00:00 | PT16H0M0S | 7 | 2025-12-24T09:00:00 | 0 | 1 | 0 | 0 | 0 | 0 | 0 | 1 | 0 | 0 | 0 | 3 | 0 | 0 | PT16H0M0S | 0 | -1 | 1970-01-01T00:00:00 | 0 | 0 | 0 | 8 | 0 | 0 | 0 | 0 | 1 | 0 | 43 | Llegada Columnas Metálicas | 2025-12-24T09:00:00 | 2025-12-26T09:00:00 | PT16H0M0S | 0 |  | 5 | 1.2.1.3.4 |  | 41 |
| 44 | 44 | Llegada Cerchas/Vigas Metálicas | 0 | 0 | 2026-01-22T03:41:00 | 1.2.1.3.5 | 1.2.1.3.5 | 5 | 500 | 2025-11-19T09:00:00 | 2025-11-21T09:00:00 | PT16H0M0S | 7 | 2025-11-19T09:00:00 | 0 | 1 | 0 | 0 | 0 | 0 | 0 | 1 | 0 | 0 | 0 | 3 | 0 | 0 | PT16H0M0S | 0 | -1 | 1970-01-01T00:00:00 | 0 | 0 | 0 | 8 | 0 | 0 | 0 | 0 | 1 | 0 | 44 | Llegada Cerchas/Vigas Metálicas | 2025-11-19T09:00:00 | 2025-11-21T09:00:00 | PT16H0M0S | 0 |  | 5 | 1.2.1.3.5 |  | 93 |
| 45 | 45 | Instalación Columnas | 0 | 0 | 2025-11-19T03:39:00 | 1.2.1.3.6 | 1.2.1.3.6 | 5 | 500 | 2025-12-26T09:00:00 | 2026-01-01T14:00:00 | PT40H0M0S | 7 | 2025-12-26T09:00:00 | 0 | 1 | 0 | 0 | 0 | 0 | 0 | 1 | 0 | 0 | 0 | 3 | 0 | 0 | PT40H0M0S | 0 | -1 | 1970-01-01T00:00:00 | 0 | 0 | 0 | 8 | 0 | 0 | 0 | 0 | 1 | 0 | 45 | Instalación Columnas | 2025-12-26T09:00:00 | 2026-01-01T14:00:00 | PT40H0M0S | 0 |  | 5 | 1.2.1.3.6 |  | 43 |
| 46 | 46 | Llegada Cerchas/Vigas Metálicas | 0 | 0 | 2026-01-22T03:41:00 | 1.2.1.3.7 | 1.2.1.3.7 | 5 | 500 | 2025-11-19T09:00:00 | 2025-11-21T09:00:00 | PT16H0M0S | 7 | 2025-11-19T09:00:00 | 0 | 1 | 0 | 0 | 0 | 0 | 0 | 1 | 0 | 0 | 0 | 3 | 0 | 0 | PT16H0M0S | 0 | -1 | 1970-01-01T00:00:00 | 0 | 0 | 0 | 8 | 0 | 0 | 0 | 0 | 1 | 0 | 46 | Llegada Cerchas/Vigas Metálicas | 2025-11-19T09:00:00 | 2025-11-21T09:00:00 | PT16H0M0S | 0 |  | 5 | 1.2.1.3.7 |  | 116 |
| 47 | 47 | Instalación Cerchas/Vigas Metálicas h:3.50 - 3.60 | 0 | 0 | 2025-11-19T03:39:00 | 1.2.1.3.8 | 1.2.1.3.8 | 5 | 500 | 2025-12-30T14:00:00 | 2026-01-08T09:00:00 | PT48H0M0S | 7 | 2025-12-30T14:00:00 | 0 | 1 | 0 | 0 | 0 | 0 | 0 | 1 | 0 | 0 | 0 | 3 | 0 | 0 | PT48H0M0S | 0 | -1 | 1970-01-01T00:00:00 | 0 | 0 | 0 | 8 | 0 | 0 | 0 | 0 | 1 | 0 | 47 | Instalación Cerchas/Vigas Metálicas h:3.50 - 3.60 | 2025-12-30T14:00:00 | 2026-01-08T09:00:00 | PT48H0M0S | 0 |  | 5 | 1.2.1.3.8 |  | 42, 45 |
| 48 | 48 | Entrega Estructura metálica | 0 | 0 | 2025-11-19T03:39:00 | 1.2.1.3.9 | 1.2.1.3.9 | 5 | 500 | 2026-01-07T09:00:00 | 2026-01-10T09:00:00 | PT24H0M0S | 7 |  | 0 | 1 | 0 | 0 | 0 | 0 | 0 | 1 | 0 | 0 | 0 | 3 | 0 | 0 | PT24H0M0S | 0 | -1 | 1970-01-01T00:00:00 | 0 | 0 | 0 | 8 | 0 | 0 | 0 | 0 | 1 | 0 | 48 | Entrega Estructura metálica | 2026-01-07T09:00:00 | 2026-01-10T09:00:00 | PT24H0M0S | 0 |  | 5 | 1.2.1.3.9 |  | 47 |
| 49 | 49 | Llegada Columnas Metálicas | 0 | 0 | 2025-11-19T03:57:00 | 1.2.1.3.10 | 1.2.1.3.10 | 5 | 500 | 2026-02-17T09:00:00 | 2026-02-18T09:00:00 | PT8H0M0S | 7 |  | 0 | 1 | 0 | 0 | 0 | 0 | 0 | 1 | 0 | 0 | 0 | 3 | 0 | 0 | PT8H0M0S | 0 | -1 | 1970-01-01T00:00:00 | 0 | 0 | 0 | 8 | 0 | 0 | 0 | 0 | 1 | 0 | 49 | Llegada Columnas Metálicas | 2026-02-17T09:00:00 | 2026-02-18T09:00:00 | PT8H0M0S | 0 |  | 5 | 1.2.1.3.10 |  | 138 |
| 50 | 50 | Llegada Columnas Metálicas | 0 | 0 | 2025-11-19T03:59:00 | 1.2.1.3.11 | 1.2.1.3.11 | 5 | 500 | 2026-02-20T09:00:00 | 2026-02-21T09:00:00 | PT8H0M0S | 7 |  | 0 | 1 | 0 | 0 | 0 | 0 | 1 | 1 | 0 | 0 | 0 | 3 | 0 | 0 | PT8H0M0S | 0 | -1 | 1970-01-01T00:00:00 | 0 | 0 | 0 | 8 | 0 | 0 | 0 | 0 | 1 | 0 | 50 | Llegada Columnas Metálicas | 2026-02-20T09:00:00 | 2026-02-21T09:00:00 | PT8H0M0S | 0 | True | 5 | 1.2.1.3.11 |  | 159 |
| 51 | 51 | Replanteo Columnas | 0 | 0 | 2025-12-01T10:43:00 | 1.2.1.3.11.1 | 1.2.1.3.11.1 | 6 | 500 | 2026-01-06T09:00:00 | 2026-01-08T09:00:00 | PT16H0M0S | 7 |  | 0 | 1 | 0 | 0 | 0 | 0 | 0 | 1 | 0 | 0 | 0 | 3 | 0 | 0 | PT16H0M0S | 0 | -1 | 1970-01-01T00:00:00 | 0 | 0 | 0 | 8 | 0 | 0 | 0 | 0 | 1 | 0 | 51 | Replanteo Columnas | 2026-01-06T09:00:00 | 2026-01-08T09:00:00 | PT16H0M0S | 0 |  | 6 | 1.2.1.3.11.1 |  | 45 |
| 52 | 52 | Compra materiales y Fabricación | 0 | 0 | 2025-12-01T10:40:00 | 1.2.1.3.11.2 | 1.2.1.3.11.2 | 6 | 500 | 2026-01-06T09:00:00 | 2026-01-10T09:00:00 | PT32H0M0S | 7 |  | 0 | 1 | 0 | 0 | 0 | 0 | 0 | 1 | 0 | 0 | 0 | 3 | 0 | 0 | PT32H0M0S | 0 | -1 | 1970-01-01T00:00:00 | 0 | 0 | 0 | 8 | 0 | 0 | 0 | 0 | 1 | 0 | 52 | Compra materiales y Fabricación | 2026-01-06T09:00:00 | 2026-01-10T09:00:00 | PT32H0M0S | 0 |  | 6 | 1.2.1.3.11.2 |  | 51 |
| 53 | 53 | Llegada Cerchas/Vigas Metálicas | 0 | 0 | 2026-01-22T03:41:00 | 1.2.1.3.12 | 1.2.1.3.12 | 5 | 500 | 2026-02-19T09:00:00 | 2026-02-21T09:00:00 | PT16H0M0S | 7 |  | 0 | 1 | 0 | 0 | 0 | 0 | 1 | 1 | 0 | 0 | 0 | 3 | 0 | 0 | PT16H0M0S | 0 | -1 | 1970-01-01T00:00:00 | 0 | 0 | 0 | 8 | 0 | 0 | 0 | 0 | 1 | 0 | 53 | Llegada Cerchas/Vigas Metálicas | 2026-02-19T09:00:00 | 2026-02-21T09:00:00 | PT16H0M0S | 0 | True | 5 | 1.2.1.3.12 |  | 70 |
| 54 | 54 | Llegada Columnas Metálicas | 0 | 0 | 2025-12-01T10:40:00 | 1.2.1.3.12.1 | 1.2.1.3.12.1 | 6 | 500 | 2026-01-13T14:00:00 | 2026-01-14T14:00:00 | PT8H0M0S | 7 |  | 0 | 1 | 0 | 0 | 0 | 0 | 0 | 1 | 0 | 0 | 0 | 3 | 0 | 0 | PT8H0M0S | 0 | -1 | 1970-01-01T00:00:00 | 0 | 0 | 0 | 8 | 0 | 0 | 0 | 0 | 1 | 0 | 54 | Llegada Columnas Metálicas | 2026-01-13T14:00:00 | 2026-01-14T14:00:00 | PT8H0M0S | 0 |  | 6 | 1.2.1.3.12.1 |  | 52 |
| 55 | 55 | Llegada Cerchas/Vigas Metálicas | 0 | 0 | 2025-12-01T10:40:00 | 1.2.1.3.12.2 | 1.2.1.3.12.2 | 6 | 500 | 2026-01-15T14:00:00 | 2026-01-16T14:00:00 | PT8H0M0S | 7 |  | 0 | 1 | 0 | 0 | 0 | 0 | 0 | 1 | 0 | 0 | 0 | 3 | 0 | 0 | PT8H0M0S | 0 | -1 | 1970-01-01T00:00:00 | 0 | 0 | 0 | 8 | 0 | 0 | 0 | 0 | 1 | 0 | 55 | Llegada Cerchas/Vigas Metálicas | 2026-01-15T14:00:00 | 2026-01-16T14:00:00 | PT8H0M0S | 0 |  | 6 | 1.2.1.3.12.2 |  | 54 |
| 56 | 56 | Instalación Columnas | 0 | 0 | 2025-12-01T10:40:00 | 1.2.1.3.12.3 | 1.2.1.3.12.3 | 6 | 500 | 2026-01-14T14:00:00 | 2026-01-22T09:00:00 | PT48H0M0S | 7 |  | 0 | 1 | 0 | 0 | 0 | 0 | 0 | 1 | 0 | 0 | 0 | 3 | 0 | 0 | PT48H0M0S | 0 | -1 | 1970-01-01T00:00:00 | 0 | 0 | 0 | 8 | 0 | 0 | 0 | 0 | 1 | 0 | 56 | Instalación Columnas | 2026-01-14T14:00:00 | 2026-01-22T09:00:00 | PT48H0M0S | 0 |  | 6 | 1.2.1.3.12.3 |  | 54 |
| 57 | 57 | Instalación Cerchas/Vigas Metálicas h:3.50 - 3.60 | 0 | 0 | 2025-12-01T10:40:00 | 1.2.1.3.12.4 | 1.2.1.3.12.4 | 6 | 500 | 2026-01-19T09:00:00 | 2026-01-26T14:00:00 | PT48H0M0S | 7 |  | 0 | 1 | 0 | 0 | 0 | 0 | 0 | 1 | 0 | 0 | 0 | 3 | 0 | 0 | PT48H0M0S | 0 | -1 | 1970-01-01T00:00:00 | 0 | 0 | 0 | 8 | 0 | 0 | 0 | 0 | 1 | 0 | 57 | Instalación Cerchas/Vigas Metálicas h:3.50 - 3.60 | 2026-01-19T09:00:00 | 2026-01-26T14:00:00 | PT48H0M0S | 0 |  | 6 | 1.2.1.3.12.4 |  | 55, 56 |
| 58 | 58 | Instalación Columnas | 0 | 0 | 2025-12-01T11:30:00 | 1.2.1.3.12.5 | 1.2.1.3.12.5 | 6 | 500 | 2026-02-09T14:00:00 | 2026-02-11T14:00:00 | PT16H0M0S | 7 |  | 0 | 1 | 0 | 0 | 0 | 0 | 0 | 1 | 0 | 0 | 0 | 3 | 0 | 0 | PT16H0M0S | 0 | -1 | 1970-01-01T00:00:00 | 0 | 0 | 0 | 8 | 0 | 0 | 0 | 0 | 1 | 0 | 58 | Instalación Columnas | 2026-02-09T14:00:00 | 2026-02-11T14:00:00 | PT16H0M0S | 0 |  | 6 | 1.2.1.3.12.5 |  | 197 |
| 59 | 59 | Cuartos Ejes 7-9 (Zona 5) | 1 | 0 | 2025-11-19T03:49:00 | 1.2.1.4 | 1.2.1.4 | 4 | 500 | 2025-11-19T09:00:00 | 2025-12-10T14:00:00 | PT136H0M0S | 7 | 2025-11-19T09:00:00 | 0 | 1 | 0 | 0 | 0 | 0 | 1 | 1 | 0 | 0 | 0 | 3 | 0 | 0 | PT136H0M0S | 0 | -1 | 1970-01-01T00:00:00 | 0 | 0 | 0 | 8 | 0 | 0 | 0 | 0 | 1 | 0 | 59 | Cuartos Ejes 7-9 (Zona 5) | 2025-11-19T09:00:00 | 2025-12-10T14:00:00 | PT136H0M0S | 0 | True | 4 | 1.2.1.4 |  |  |
| 60 | 60 | Entrega Estructura metálica | 0 | 0 | 2025-12-01T10:40:00 | 1.2.1.4.1 | 1.2.1.4.1 | 5 | 500 | 2026-01-22T09:00:00 | 2026-01-24T09:00:00 | PT16H0M0S | 7 |  | 0 | 1 | 0 | 0 | 0 | 0 | 0 | 1 | 0 | 0 | 0 | 3 | 0 | 0 | PT16H0M0S | 0 | -1 | 1970-01-01T00:00:00 | 0 | 0 | 0 | 8 | 0 | 0 | 0 | 0 | 1 | 0 | 60 | Entrega Estructura metálica | 2026-01-22T09:00:00 | 2026-01-24T09:00:00 | PT16H0M0S | 0 |  | 5 | 1.2.1.4.1 |  | 57 |
| 61 | 61 | Replanteo Columnas | 0 | 0 | 2025-11-19T03:49:00 | 1.2.1.4.2 | 1.2.1.4.2 | 5 | 500 | 2026-01-22T09:00:00 | 2026-01-24T09:00:00 | PT16H0M0S | 7 |  | 0 | 1 | 0 | 0 | 0 | 0 | 0 | 1 | 0 | 0 | 0 | 3 | 0 | 0 | PT16H0M0S | 0 | -1 | 1970-01-01T00:00:00 | 0 | 0 | 0 | 8 | 0 | 0 | 0 | 0 | 1 | 0 | 61 | Replanteo Columnas | 2026-01-22T09:00:00 | 2026-01-24T09:00:00 | PT16H0M0S | 0 |  | 5 | 1.2.1.4.2 |  | 56 |
| 62 | 62 | Llegada Columnas Metálicas | 0 | 0 | 2025-11-19T03:49:00 | 1.2.1.4.3 | 1.2.1.4.3 | 5 | 500 | 2026-01-30T14:00:00 | 2026-02-03T09:00:00 | PT16H0M0S | 7 |  | 0 | 1 | 0 | 0 | 0 | 0 | 0 | 1 | 0 | 0 | 0 | 3 | 0 | 0 | PT16H0M0S | 0 | -1 | 1970-01-01T00:00:00 | 0 | 0 | 0 | 8 | 0 | 0 | 0 | 0 | 1 | 0 | 62 | Llegada Columnas Metálicas | 2026-01-30T14:00:00 | 2026-02-03T09:00:00 | PT16H0M0S | 0 |  | 5 | 1.2.1.4.3 |  | 69 |
| 63 | 63 | Llegada Cerchas/Vigas Metálicas | 0 | 0 | 2025-11-19T03:49:00 | 1.2.1.4.4 | 1.2.1.4.4 | 5 | 500 | 2026-02-04T09:00:00 | 2026-02-06T09:00:00 | PT16H0M0S | 7 |  | 0 | 1 | 0 | 0 | 0 | 0 | 0 | 1 | 0 | 0 | 0 | 3 | 0 | 0 | PT16H0M0S | 0 | -1 | 1970-01-01T00:00:00 | 0 | 0 | 0 | 8 | 0 | 0 | 0 | 0 | 1 | 0 | 63 | Llegada Cerchas/Vigas Metálicas | 2026-02-04T09:00:00 | 2026-02-06T09:00:00 | PT16H0M0S | 0 |  | 5 | 1.2.1.4.4 |  | 62 |
| 64 | 64 | Instalación Columnas | 0 | 0 | 2025-11-19T03:49:00 | 1.2.1.4.5 | 1.2.1.4.5 | 5 | 500 | 2026-02-03T09:00:00 | 2026-02-09T14:00:00 | PT40H0M0S | 7 |  | 0 | 1 | 0 | 0 | 0 | 0 | 0 | 1 | 0 | 0 | 0 | 3 | 0 | 0 | PT40H0M0S | 0 | -1 | 1970-01-01T00:00:00 | 0 | 0 | 0 | 8 | 0 | 0 | 0 | 0 | 1 | 0 | 64 | Instalación Columnas | 2026-02-03T09:00:00 | 2026-02-09T14:00:00 | PT40H0M0S | 0 |  | 5 | 1.2.1.4.5 |  | 62 |
| 65 | 65 | Instalación Cerchas/Vigas Metálicas h:3.50 - 3.60 | 0 | 0 | 2025-11-19T03:49:00 | 1.2.1.4.6 | 1.2.1.4.6 | 5 | 500 | 2026-02-06T09:00:00 | 2026-02-12T14:00:00 | PT40H0M0S | 7 |  | 0 | 1 | 0 | 0 | 0 | 0 | 0 | 1 | 0 | 0 | 0 | 3 | 0 | 0 | PT40H0M0S | 0 | -1 | 1970-01-01T00:00:00 | 0 | 0 | 0 | 8 | 0 | 0 | 0 | 0 | 1 | 0 | 65 | Instalación Cerchas/Vigas Metálicas h:3.50 - 3.60 | 2026-02-06T09:00:00 | 2026-02-12T14:00:00 | PT40H0M0S | 0 |  | 5 | 1.2.1.4.6 |  | 63, 64 |
| 66 | 66 | Entrega Estructura metálica | 0 | 0 | 2025-11-19T03:49:00 | 1.2.1.4.7 | 1.2.1.4.7 | 5 | 500 | 2026-02-10T09:00:00 | 2026-02-12T09:00:00 | PT16H0M0S | 7 |  | 0 | 1 | 0 | 0 | 0 | 0 | 0 | 1 | 0 | 0 | 0 | 3 | 0 | 0 | PT16H0M0S | 0 | -1 | 1970-01-01T00:00:00 | 0 | 0 | 0 | 8 | 0 | 0 | 0 | 0 | 1 | 0 | 66 | Entrega Estructura metálica | 2026-02-10T09:00:00 | 2026-02-12T09:00:00 | PT16H0M0S | 0 |  | 5 | 1.2.1.4.7 |  | 65 |
| 67 | 67 | Cuartos Ejes 7-9 (Zona 7) | 1 | 0 | 2026-01-22T03:41:00 | 1.2.1.5 | 1.2.1.5 | 4 | 500 | 2026-02-06T09:00:00 | 2026-03-03T09:00:00 | PT152H0M0S | 7 |  | 0 | 1 | 0 | 0 | 0 | 0 | 1 | 1 | 0 | 0 | 0 | 3 | 0 | 0 | PT152H0M0S | 0 | -1 | 1970-01-01T00:00:00 | 0 | 0 | 0 | 8 | 0 | 0 | 0 | 0 | 1 | 0 | 67 | Cuartos Ejes 7-9 (Zona 7) | 2026-02-06T09:00:00 | 2026-03-03T09:00:00 | PT152H0M0S | 0 | True | 4 | 1.2.1.5 |  |  |
| 68 | 68 | Replanteo Columnas | 0 | 0 | 2026-01-22T03:41:00 | 1.2.1.5.1 | 1.2.1.5.1 | 5 | 500 | 2026-02-06T09:00:00 | 2026-02-09T14:00:00 | PT16H0M0S | 7 |  | 0 | 1 | 0 | 0 | 0 | 0 | 0 | 1 | 0 | 0 | 0 | 3 | 0 | 0 | PT16H0M0S | 0 | -1 | 1970-01-01T00:00:00 | 0 | 0 | 0 | 8 | 0 | 0 | 0 | 0 | 1 | 0 | 68 | Replanteo Columnas | 2026-02-06T09:00:00 | 2026-02-09T14:00:00 | PT16H0M0S | 0 |  | 5 | 1.2.1.5.1 |  | 63 |
| 69 | 69 | Compra materiales y Fabricación | 0 | 0 | 2025-11-19T03:49:00 | 1.2.1.5.2 | 1.2.1.5.2 | 5 | 500 | 2026-01-22T09:00:00 | 2026-01-29T14:00:00 | PT48H0M0S | 7 |  | 0 | 1 | 0 | 0 | 0 | 0 | 0 | 1 | 0 | 0 | 0 | 3 | 0 | 0 | PT48H0M0S | 0 | -1 | 1970-01-01T00:00:00 | 0 | 0 | 0 | 8 | 0 | 0 | 0 | 0 | 1 | 0 | 69 | Compra materiales y Fabricación | 2026-01-22T09:00:00 | 2026-01-29T14:00:00 | PT48H0M0S | 0 |  | 5 | 1.2.1.5.2 |  |  |
| 70 | 70 | Llegada Columnas Metálicas | 0 | 0 | 2026-01-22T03:41:00 | 1.2.1.5.3 | 1.2.1.5.3 | 5 | 500 | 2026-02-16T09:00:00 | 2026-02-18T09:00:00 | PT16H0M0S | 7 |  | 0 | 1 | 0 | 0 | 0 | 0 | 0 | 1 | 0 | 0 | 0 | 3 | 0 | 0 | PT16H0M0S | 0 | -1 | 1970-01-01T00:00:00 | 0 | 0 | 0 | 8 | 0 | 0 | 0 | 0 | 1 | 0 | 70 | Llegada Columnas Metálicas | 2026-02-16T09:00:00 | 2026-02-18T09:00:00 | PT16H0M0S | 0 |  | 5 | 1.2.1.5.3 |  | 71 |

| UID | ID | Name | Type | IsNull | CreateDate | WBS | OutlineNumber | OutlineLevel | Priority | Start | Finish | Duration | DurationFormat | Resume | ResumeValid | EffortDriven | Recurring | OverAllocated | Estimated | Milestone | Summary | Critical | IsSubproject | IsSubprojectReadOnly | ExternalTask | FixedCostAccrual | PercentComplete | PercentWorkComplete | RemainingDuration | ConstraintType | CalendarUID | ConstraintDate | LevelAssignments | LevelingCanSplit | LevelingDelay | LevelingDelayFormat | IgnoreResourceCalendar | HideBar | Rollup | EarnedValueMethod | Active | Manual | id | name | start | finish | duration | percentComplete | isSummary | outlineLevel | wbs | predecessors |
| --- | --- | --- | --- | --- | --- | --- | --- | --- | --- | --- | --- | --- | --- | --- | --- | --- | --- | --- | --- | --- | --- | --- | --- | --- | --- | --- | --- | --- | --- | --- | --- | --- | --- | --- | --- | --- | --- | --- | --- | --- | --- | --- | --- | --- | --- | --- | --- | --- | --- | --- | --- | --- |
| 71 | 71 | Compra materiales y Fabricación | 0 | 0 | 2026-01-22T03:41:00 | 1.2.1.5.4 | 1.2.1.5.4 | 5 | 500 | 2026-02-06T09:00:00 | 2026-02-13T14:00:00 | PT48H0M0S | 7 |  | 0 | 1 | 0 | 0 | 0 | 0 | 0 | 1 | 0 | 0 | 0 | 3 | 0 | 0 | PT48H0M0S | 0 | -1 | 1970-01-01T00:00:00 | 0 | 0 | 0 | 8 | 0 | 0 | 0 | 0 | 1 | 0 | 71 | Compra materiales y Fabricación | 2026-02-06T09:00:00 | 2026-02-13T14:00:00 | PT48H0M0S | 0 |  | 5 | 1.2.1.5.4 |  |
| 72 | 72 | Instalación Cerchas/Vigas Metálicas h:3.50 - 3.60 | 0 | 0 | 2026-01-22T03:41:00 | 1.2.1.5.5 | 1.2.1.5.5 | 5 | 500 | 2026-02-21T09:00:00 | 2026-02-27T14:00:00 | PT40H0M0S | 7 |  | 0 | 1 | 0 | 0 | 0 | 0 | 0 | 1 | 0 | 0 | 0 | 3 | 0 | 0 | PT40H0M0S | 0 | -1 | 1970-01-01T00:00:00 | 0 | 0 | 0 | 8 | 0 | 0 | 0 | 0 | 1 | 0 | 72 | Instalación Cerchas/Vigas Metálicas h:3.50 - 3.60 | 2026-02-21T09:00:00 | 2026-02-27T14:00:00 | PT40H0M0S | 0 |  | 5 | 1.2.1.5.5 | 53, 75 |
| 73 | 73 | Cuartos Ejes 4 - 7 | 1 | 0 | 2026-01-22T03:41:00 | 1.2.1.5.6 | 1.2.1.5.6 | 5 | 500 | 2026-02-09T14:00:00 | 2026-03-03T09:00:00 | PT136H0M0S | 7 |  | 0 | 1 | 0 | 0 | 0 | 0 | 1 | 1 | 0 | 0 | 0 | 3 | 0 | 0 | PT136H0M0S | 0 | -1 | 1970-01-01T00:00:00 | 0 | 0 | 0 | 8 | 0 | 0 | 0 | 0 | 1 | 0 | 73 | Cuartos Ejes 4 - 7 | 2026-02-09T14:00:00 | 2026-03-03T09:00:00 | PT136H0M0S | 0 | True | 5 | 1.2.1.5.6 |  |
| 74 | 74 | Llegada Columnas Metálicas | 0 | 0 | 2026-01-22T03:41:00 | 1.2.1.5.6.1 | 1.2.1.5.6.1 | 6 | 500 | 2026-02-18T09:00:00 | 2026-02-20T09:00:00 | PT16H0M0S | 7 |  | 0 | 1 | 0 | 0 | 0 | 0 | 0 | 1 | 0 | 0 | 0 | 3 | 0 | 0 | PT16H0M0S | 0 | -1 | 1970-01-01T00:00:00 | 0 | 0 | 0 | 8 | 0 | 0 | 0 | 0 | 1 | 0 | 74 | Llegada Columnas Metálicas | 2026-02-18T09:00:00 | 2026-02-20T09:00:00 | PT16H0M0S | 0 |  | 6 | 1.2.1.5.6.1 | 92 |
| 75 | 75 | Instalación Columnas | 0 | 0 | 2026-01-22T03:41:00 | 1.2.1.5.7 | 1.2.1.5.7 | 5 | 500 | 2026-02-18T09:00:00 | 2026-02-24T14:00:00 | PT40H0M0S | 7 |  | 0 | 1 | 0 | 0 | 0 | 0 | 1 | 1 | 0 | 0 | 0 | 3 | 0 | 0 | PT40H0M0S | 0 | -1 | 1970-01-01T00:00:00 | 0 | 0 | 0 | 8 | 0 | 0 | 0 | 0 | 1 | 0 | 75 | Instalación Columnas | 2026-02-18T09:00:00 | 2026-02-24T14:00:00 | PT40H0M0S | 0 | True | 5 | 1.2.1.5.7 | 70 |
| 76 | 76 | Llegada Cerchas/Vigas Metálicas | 0 | 0 | 2026-01-22T03:41:00 | 1.2.1.5.7.1 | 1.2.1.5.7.1 | 6 | 500 | 2026-02-21T09:00:00 | 2026-02-24T14:00:00 | PT16H0M0S | 7 |  | 0 | 1 | 0 | 0 | 0 | 0 | 0 | 1 | 0 | 0 | 0 | 3 | 0 | 0 | PT16H0M0S | 0 | -1 | 1970-01-01T00:00:00 | 0 | 0 | 0 | 8 | 0 | 0 | 0 | 0 | 1 | 0 | 76 | Llegada Cerchas/Vigas Metálicas | 2026-02-21T09:00:00 | 2026-02-24T14:00:00 | PT16H0M0S | 0 |  | 6 | 1.2.1.5.7.1 | 74 |
| 77 | 77 | Instalación Columnas | 0 | 0 | 2026-01-22T03:41:00 | 1.2.1.5.7.2 | 1.2.1.5.7.2 | 6 | 500 | 2026-02-20T09:00:00 | 2026-02-26T14:00:00 | PT40H0M0S | 7 |  | 0 | 1 | 0 | 0 | 0 | 0 | 0 | 1 | 0 | 0 | 0 | 3 | 0 | 0 | PT40H0M0S | 0 | -1 | 1970-01-01T00:00:00 | 0 | 0 | 0 | 8 | 0 | 0 | 0 | 0 | 1 | 0 | 77 | Instalación Columnas | 2026-02-20T09:00:00 | 2026-02-26T14:00:00 | PT40H0M0S | 0 |  | 6 | 1.2.1.5.7.2 | 74 |
| 78 | 78 | Entrega Estructura metálica | 0 | 0 | 2026-01-22T03:41:00 | 1.2.1.5.8 | 1.2.1.5.8 | 5 | 500 | 2026-02-25T09:00:00 | 2026-02-27T09:00:00 | PT16H0M0S | 7 |  | 0 | 1 | 0 | 0 | 0 | 0 | 1 | 1 | 0 | 0 | 0 | 3 | 0 | 0 | PT16H0M0S | 0 | -1 | 1970-01-01T00:00:00 | 0 | 0 | 0 | 8 | 0 | 0 | 0 | 0 | 1 | 0 | 78 | Entrega Estructura metálica | 2026-02-25T09:00:00 | 2026-02-27T09:00:00 | PT16H0M0S | 0 | True | 5 | 1.2.1.5.8 | 72 |
| 79 | 79 | Instalación Cerchas/Vigas Metálicas h:3.50 - 3.60 | 0 | 0 | 2026-01-22T03:41:00 | 1.2.1.5.8.1 | 1.2.1.5.8.1 | 6 | 500 | 2026-02-24T14:00:00 | 2026-03-03T09:00:00 | PT40H0M0S | 7 |  | 0 | 1 | 0 | 0 | 0 | 0 | 0 | 1 | 0 | 0 | 0 | 3 | 0 | 0 | PT40H0M0S | 0 | -1 | 1970-01-01T00:00:00 | 0 | 0 | 0 | 8 | 0 | 0 | 0 | 0 | 1 | 0 | 79 | Instalación Cerchas/Vigas Metálicas h:3.50 - 3.60 | 2026-02-24T14:00:00 | 2026-03-03T09:00:00 | PT40H0M0S | 0 |  | 6 | 1.2.1.5.8.1 | 76, 77 |
| 80 | 80 | Entrega Estructura metálica | 0 | 0 | 2026-01-22T03:41:00 | 1.2.1.5.8.2 | 1.2.1.5.8.2 | 6 | 500 | 2026-02-27T09:00:00 | 2026-03-02T14:00:00 | PT16H0M0S | 7 |  | 0 | 1 | 0 | 0 | 0 | 0 | 0 | 1 | 0 | 0 | 0 | 3 | 0 | 0 | PT16H0M0S | 0 | -1 | 1970-01-01T00:00:00 | 0 | 0 | 0 | 8 | 0 | 0 | 0 | 0 | 1 | 0 | 80 | Entrega Estructura metálica | 2026-02-27T09:00:00 | 2026-03-02T14:00:00 | PT16H0M0S | 0 |  | 6 | 1.2.1.5.8.2 | 79 |
| 81 | 81 | Replanteo Columnas | 0 | 0 | 2026-01-22T03:41:00 | 1.2.1.5.8.3 | 1.2.1.5.8.3 | 6 | 500 | 2026-02-09T14:00:00 | 2026-02-11T14:00:00 | PT16H0M0S | 7 |  | 0 | 1 | 0 | 0 | 0 | 0 | 0 | 1 | 0 | 0 | 0 | 3 | 0 | 0 | PT16H0M0S | 0 | -1 | 1970-01-01T00:00:00 | 0 | 0 | 0 | 8 | 0 | 0 | 0 | 0 | 1 | 0 | 81 | Replanteo Columnas | 2026-02-09T14:00:00 | 2026-02-11T14:00:00 | PT16H0M0S | 0 |  | 6 | 1.2.1.5.8.3 | 68 |
| 82 | 82 | Cuartos Ejes (Zona 8A) | 1 | 0 | 2026-01-22T03:41:00 | 1.2.1.6 | 1.2.1.6 | 4 | 500 | 2026-02-11T14:00:00 | 2026-03-05T09:00:00 | PT136H0M0S | 7 |  | 0 | 1 | 0 | 0 | 0 | 0 | 1 | 1 | 0 | 0 | 0 | 3 | 0 | 0 | PT136H0M0S | 0 | -1 | 1970-01-01T00:00:00 | 0 | 0 | 0 | 8 | 0 | 0 | 0 | 0 | 1 | 0 | 82 | Cuartos Ejes (Zona 8A) | 2026-02-11T14:00:00 | 2026-03-05T09:00:00 | PT136H0M0S | 0 | True | 4 | 1.2.1.6 |  |
| 83 | 83 | Replanteo Columnas | 0 | 0 | 2026-01-22T03:41:00 | 1.2.1.6.1 | 1.2.1.6.1 | 5 | 500 | 2026-02-11T14:00:00 | 2026-02-13T14:00:00 | PT16H0M0S | 7 |  | 0 | 1 | 0 | 0 | 0 | 0 | 0 | 1 | 0 | 0 | 0 | 3 | 0 | 0 | PT16H0M0S | 0 | -1 | 1970-01-01T00:00:00 | 0 | 0 | 0 | 8 | 0 | 0 | 0 | 0 | 1 | 0 | 83 | Replanteo Columnas | 2026-02-11T14:00:00 | 2026-02-13T14:00:00 | PT16H0M0S | 0 |  | 5 | 1.2.1.6.1 | 81 |
| 84 | 84 | Compra materiales y Fabricación | 0 | 0 | 2026-01-22T03:41:00 | 1.2.1.6.2 | 1.2.1.6.2 | 5 | 500 | 2026-02-11T14:00:00 | 2026-02-19T09:00:00 | PT48H0M0S | 7 |  | 0 | 1 | 0 | 0 | 0 | 0 | 0 | 1 | 0 | 0 | 0 | 3 | 0 | 0 | PT48H0M0S | 0 | -1 | 1970-01-01T00:00:00 | 0 | 0 | 0 | 8 | 0 | 0 | 0 | 0 | 1 | 0 | 84 | Compra materiales y Fabricación | 2026-02-11T14:00:00 | 2026-02-19T09:00:00 | PT48H0M0S | 0 |  | 5 | 1.2.1.6.2 | 83 |
| 85 | 85 | Llegada Columnas Metálicas | 0 | 0 | 2026-01-22T03:41:00 | 1.2.1.6.3 | 1.2.1.6.3 | 5 | 500 | 2026-02-20T09:00:00 | 2026-02-23T14:00:00 | PT16H0M0S | 7 |  | 0 | 1 | 0 | 0 | 0 | 0 | 0 | 1 | 0 | 0 | 0 | 3 | 0 | 0 | PT16H0M0S | 0 | -1 | 1970-01-01T00:00:00 | 0 | 0 | 0 | 8 | 0 | 0 | 0 | 0 | 1 | 0 | 85 | Llegada Columnas Metálicas | 2026-02-20T09:00:00 | 2026-02-23T14:00:00 | PT16H0M0S | 0 |  | 5 | 1.2.1.6.3 | 84 |
| 86 | 86 | Llegada Cerchas/Vigas Metálicas | 0 | 0 | 2026-01-22T03:41:00 | 1.2.1.6.4 | 1.2.1.6.4 | 5 | 500 | 2026-02-24T14:00:00 | 2026-02-26T14:00:00 | PT16H0M0S | 7 |  | 0 | 1 | 0 | 0 | 0 | 0 | 0 | 1 | 0 | 0 | 0 | 3 | 0 | 0 | PT16H0M0S | 0 | -1 | 1970-01-01T00:00:00 | 0 | 0 | 0 | 8 | 0 | 0 | 0 | 0 | 1 | 0 | 86 | Llegada Cerchas/Vigas Metálicas | 2026-02-24T14:00:00 | 2026-02-26T14:00:00 | PT16H0M0S | 0 |  | 5 | 1.2.1.6.4 | 85 |
| 87 | 87 | Instalación Columnas | 0 | 0 | 2026-01-22T03:41:00 | 1.2.1.6.5 | 1.2.1.6.5 | 5 | 500 | 2026-02-23T14:00:00 | 2026-03-02T09:00:00 | PT40H0M0S | 7 |  | 0 | 1 | 0 | 0 | 0 | 0 | 0 | 1 | 0 | 0 | 0 | 3 | 0 | 0 | PT40H0M0S | 0 | -1 | 1970-01-01T00:00:00 | 0 | 0 | 0 | 8 | 0 | 0 | 0 | 0 | 1 | 0 | 87 | Instalación Columnas | 2026-02-23T14:00:00 | 2026-03-02T09:00:00 | PT40H0M0S | 0 |  | 5 | 1.2.1.6.5 | 85 |
| 88 | 88 | Instalación Cerchas/Vigas Metálicas h:3.50 - 3.60 | 0 | 0 | 2026-01-22T03:41:00 | 1.2.1.6.6 | 1.2.1.6.6 | 5 | 500 | 2026-02-26T14:00:00 | 2026-03-05T09:00:00 | PT40H0M0S | 7 |  | 0 | 1 | 0 | 0 | 0 | 0 | 0 | 1 | 0 | 0 | 0 | 3 | 0 | 0 | PT40H0M0S | 0 | -1 | 1970-01-01T00:00:00 | 0 | 0 | 0 | 8 | 0 | 0 | 0 | 0 | 1 | 0 | 88 | Instalación Cerchas/Vigas Metálicas h:3.50 - 3.60 | 2026-02-26T14:00:00 | 2026-03-05T09:00:00 | PT40H0M0S | 0 |  | 5 | 1.2.1.6.6 | 86, 87 |
| 89 | 89 | Entrega Estructura metálica | 0 | 0 | 2026-01-22T03:41:00 | 1.2.1.6.7 | 1.2.1.6.7 | 5 | 500 | 2026-03-02T14:00:00 | 2026-03-04T14:00:00 | PT16H0M0S | 7 |  | 0 | 1 | 0 | 0 | 0 | 0 | 0 | 1 | 0 | 0 | 0 | 3 | 0 | 0 | PT16H0M0S | 0 | -1 | 1970-01-01T00:00:00 | 0 | 0 | 0 | 8 | 0 | 0 | 0 | 0 | 1 | 0 | 89 | Entrega Estructura metálica | 2026-03-02T14:00:00 | 2026-03-04T14:00:00 | PT16H0M0S | 0 |  | 5 | 1.2.1.6.7 | 88 |
| 90 | 90 | Cuartos Ejes 1-2 (Zona 4) | 1 | 0 | 2026-01-22T03:41:00 | 1.2.1.7 | 1.2.1.7 | 4 | 500 | 2025-11-19T09:00:00 | 2025-12-10T14:00:00 | PT136H0M0S | 7 | 2025-11-19T09:00:00 | 0 | 1 | 0 | 0 | 0 | 0 | 1 | 1 | 0 | 0 | 0 | 3 | 0 | 0 | PT136H0M0S | 0 | -1 | 1970-01-01T00:00:00 | 0 | 0 | 0 | 8 | 0 | 0 | 0 | 0 | 1 | 0 | 90 | Cuartos Ejes 1-2 (Zona 4) | 2025-11-19T09:00:00 | 2025-12-10T14:00:00 | PT136H0M0S | 0 | True | 4 | 1.2.1.7 |  |
| 91 | 91 | Replanteo Columnas | 0 | 0 | 2026-01-22T03:41:00 | 1.2.1.7.1 | 1.2.1.7.1 | 5 | 500 | 2025-11-19T09:00:00 | 2025-11-26T14:00:00 | PT48H0M0S | 7 | 2025-11-19T09:00:00 | 0 | 1 | 0 | 0 | 0 | 0 | 1 | 1 | 0 | 0 | 0 | 3 | 0 | 0 | PT48H0M0S | 0 | -1 | 1970-01-01T00:00:00 | 0 | 0 | 0 | 8 | 0 | 0 | 0 | 0 | 1 | 0 | 91 | Replanteo Columnas | 2025-11-19T09:00:00 | 2025-11-26T14:00:00 | PT48H0M0S | 0 | True | 5 | 1.2.1.7.1 |  |
| 92 | 92 | Compra materiales y Fabricación | 0 | 0 | 2026-01-22T03:41:00 | 1.2.1.7.1.1 | 1.2.1.7.1.1 | 6 | 500 | 2025-11-19T09:00:00 | 2025-11-26T14:00:00 | PT48H0M0S | 7 | 2025-11-19T09:00:00 | 0 | 1 | 0 | 0 | 0 | 0 | 0 | 1 | 0 | 0 | 0 | 3 | 0 | 0 | PT48H0M0S | 0 | -1 | 1970-01-01T00:00:00 | 0 | 0 | 0 | 8 | 0 | 0 | 0 | 0 | 1 | 0 | 92 | Compra materiales y Fabricación | 2025-11-19T09:00:00 | 2025-11-26T14:00:00 | PT48H0M0S | 0 |  | 6 | 1.2.1.7.1.1 |  |
| 93 | 93 | Llegada Columnas Metálicas | 0 | 0 | 2026-01-22T03:41:00 | 1.2.1.7.2 | 1.2.1.7.2 | 5 | 500 | 2026-02-23T14:00:00 | 2026-02-25T14:00:00 | PT16H0M0S | 7 |  | 0 | 1 | 0 | 0 | 0 | 0 | 0 | 1 | 0 | 0 | 0 | 3 | 0 | 0 | PT16H0M0S | 0 | -1 | 1970-01-01T00:00:00 | 0 | 0 | 0 | 8 | 0 | 0 | 0 | 0 | 1 | 0 | 93 | Llegada Columnas Metálicas | 2026-02-23T14:00:00 | 2026-02-25T14:00:00 | PT16H0M0S | 0 |  | 5 | 1.2.1.7.2 | 99 |
| 94 | 94 | Instalación Cerchas/Vigas Metálicas h:3.50 - 3.60 | 0 | 0 | 2026-01-22T03:41:00 | 1.2.1.7.3 | 1.2.1.7.3 | 5 | 500 | 2026-03-02T09:00:00 | 2026-03-07T09:00:00 | PT40H0M0S | 7 |  | 0 | 1 | 0 | 0 | 0 | 0 | 0 | 1 | 0 | 0 | 0 | 3 | 0 | 0 | PT40H0M0S | 0 | -1 | 1970-01-01T00:00:00 | 0 | 0 | 0 | 8 | 0 | 0 | 0 | 0 | 1 | 0 | 94 | Instalación Cerchas/Vigas Metálicas h:3.50 - 3.60 | 2026-03-02T09:00:00 | 2026-03-07T09:00:00 | PT40H0M0S | 0 |  | 5 | 1.2.1.7.3 | 44, 103 |
| 95 | 95 | Cuartos Ejes (Zona 6A) | 1 | 0 | 2026-01-22T03:41:00 | 1.2.1.8 | 1.2.1.8 | 4 | 500 | 2025-11-19T09:00:00 | 2025-12-10T14:00:00 | PT136H0M0S | 7 | 2025-11-19T09:00:00 | 0 | 1 | 0 | 0 | 0 | 0 | 1 | 1 | 0 | 0 | 0 | 3 | 0 | 0 | PT136H0M0S | 0 | -1 | 1970-01-01T00:00:00 | 0 | 0 | 0 | 8 | 0 | 0 | 0 | 0 | 1 | 0 | 95 | Cuartos Ejes (Zona 6A) | 2025-11-19T09:00:00 | 2025-12-10T14:00:00 | PT136H0M0S | 0 | True | 4 | 1.2.1.8 |  |
| 96 | 96 | Llegada Columnas Metálicas | 0 | 0 | 2026-01-22T03:41:00 | 1.2.1.8.1 | 1.2.1.8.1 | 5 | 500 | 2026-02-25T14:00:00 | 2026-02-27T14:00:00 | PT16H0M0S | 7 |  | 0 | 1 | 0 | 0 | 0 | 0 | 0 | 1 | 0 | 0 | 0 | 3 | 0 | 0 | PT16H0M0S | 0 | -1 | 1970-01-01T00:00:00 | 0 | 0 | 0 | 8 | 0 | 0 | 0 | 0 | 1 | 0 | 96 | Llegada Columnas Metálicas | 2026-02-25T14:00:00 | 2026-02-27T14:00:00 | PT16H0M0S | 0 |  | 5 | 1.2.1.8.1 | 115 |
| 97 | 97 | Llegada Cerchas/Vigas Metálicas | 0 | 0 | 2026-01-22T03:41:00 | 1.2.1.8.2 | 1.2.1.8.2 | 5 | 500 | 2026-03-02T09:00:00 | 2026-03-04T09:00:00 | PT16H0M0S | 7 |  | 0 | 1 | 0 | 0 | 0 | 0 | 0 | 1 | 0 | 0 | 0 | 3 | 0 | 0 | PT16H0M0S | 0 | -1 | 1970-01-01T00:00:00 | 0 | 0 | 0 | 8 | 0 | 0 | 0 | 0 | 1 | 0 | 97 | Llegada Cerchas/Vigas Metálicas | 2026-03-02T09:00:00 | 2026-03-04T09:00:00 | PT16H0M0S | 0 |  | 5 | 1.2.1.8.2 | 96 |
| 98 | 98 | Instalación Columnas | 0 | 0 | 2026-01-22T03:41:00 | 1.2.1.8.3 | 1.2.1.8.3 | 5 | 500 | 2026-02-27T14:00:00 | 2026-03-06T09:00:00 | PT40H0M0S | 7 |  | 0 | 1 | 0 | 0 | 0 | 0 | 0 | 1 | 0 | 0 | 0 | 3 | 0 | 0 | PT40H0M0S | 0 | -1 | 1970-01-01T00:00:00 | 0 | 0 | 0 | 8 | 0 | 0 | 0 | 0 | 1 | 0 | 98 | Instalación Columnas | 2026-02-27T14:00:00 | 2026-03-06T09:00:00 | PT40H0M0S | 0 |  | 5 | 1.2.1.8.3 | 96 |
| 99 | 99 | Compra materiales y Fabricación | 0 | 0 | 2026-01-22T03:41:00 | 1.2.1.8.4 | 1.2.1.8.4 | 5 | 500 | 2026-02-13T14:00:00 | 2026-02-21T09:00:00 | PT48H0M0S | 7 |  | 0 | 1 | 0 | 0 | 0 | 0 | 0 | 1 | 0 | 0 | 0 | 3 | 0 | 0 | PT48H0M0S | 0 | -1 | 1970-01-01T00:00:00 | 0 | 0 | 0 | 8 | 0 | 0 | 0 | 0 | 1 | 0 | 99 | Compra materiales y Fabricación | 2026-02-13T14:00:00 | 2026-02-21T09:00:00 | PT48H0M0S | 0 |  | 5 | 1.2.1.8.4 |  |
| 100 | 100 | Instalación Cerchas/Vigas Metálicas h:3.50 - 3.60 | 0 | 0 | 2026-01-22T03:41:00 | 1.2.1.8.5 | 1.2.1.8.5 | 5 | 500 | 2026-03-04T09:00:00 | 2026-03-10T14:00:00 | PT40H0M0S | 7 |  | 0 | 1 | 0 | 0 | 0 | 0 | 0 | 1 | 0 | 0 | 0 | 3 | 0 | 0 | PT40H0M0S | 0 | -1 | 1970-01-01T00:00:00 | 0 | 0 | 0 | 8 | 0 | 0 | 0 | 0 | 1 | 0 | 100 | Instalación Cerchas/Vigas Metálicas h:3.50 - 3.60 | 2026-03-04T09:00:00 | 2026-03-10T14:00:00 | PT40H0M0S | 0 |  | 5 | 1.2.1.8.5 | 97, 98 |
| 101 | 101 | Entrega Estructura metálica | 0 | 0 | 2026-01-22T03:41:00 | 1.2.1.8.6 | 1.2.1.8.6 | 5 | 500 | 2026-03-06T14:00:00 | 2026-03-10T09:00:00 | PT16H0M0S | 7 |  | 0 | 1 | 0 | 0 | 0 | 0 | 0 | 1 | 0 | 0 | 0 | 3 | 0 | 0 | PT16H0M0S | 0 | -1 | 1970-01-01T00:00:00 | 0 | 0 | 0 | 8 | 0 | 0 | 0 | 0 | 1 | 0 | 101 | Entrega Estructura metálica | 2026-03-06T14:00:00 | 2026-03-10T09:00:00 | PT16H0M0S | 0 |  | 5 | 1.2.1.8.6 | 100 |
| 102 | 102 | Cuartos Ejes 4 - 7 (Zona 8B) | 1 | 0 | 2026-01-22T03:41:00 | 1.2.1.9 | 1.2.1.9 | 4 | 500 | 2025-11-19T09:00:00 | 2025-12-10T14:00:00 | PT136H0M0S | 7 | 2025-11-19T09:00:00 | 0 | 1 | 0 | 0 | 0 | 0 | 1 | 1 | 0 | 0 | 0 | 3 | 0 | 0 | PT136H0M0S | 0 | -1 | 1970-01-01T00:00:00 | 0 | 0 | 0 | 8 | 0 | 0 | 0 | 0 | 1 | 0 | 102 | Cuartos Ejes 4 - 7 (Zona 8B) | 2025-11-19T09:00:00 | 2025-12-10T14:00:00 | PT136H0M0S | 0 | True | 4 | 1.2.1.9 |  |
| 103 | 103 | Instalación Columnas | 0 | 0 | 2026-01-22T03:41:00 | 1.2.1.9.1 | 1.2.1.9.1 | 5 | 500 | 2025-11-19T09:00:00 | 2025-11-25T14:00:00 | PT40H0M0S | 7 | 2025-11-19T09:00:00 | 0 | 1 | 0 | 0 | 0 | 0 | 0 | 1 | 0 | 0 | 0 | 3 | 0 | 0 | PT40H0M0S | 0 | -1 | 1970-01-01T00:00:00 | 0 | 0 | 0 | 8 | 0 | 0 | 0 | 0 | 1 | 0 | 103 | Instalación Columnas | 2025-11-19T09:00:00 | 2025-11-25T14:00:00 | PT40H0M0S | 0 |  | 5 | 1.2.1.9.1 |  |
| 104 | 104 | Replanteo Columnas | 0 | 0 | 2026-01-22T03:41:00 | 1.2.1.9.2 | 1.2.1.9.2 | 5 | 500 | 2026-02-19T09:00:00 | 2026-02-21T09:00:00 | PT16H0M0S | 7 |  | 0 | 1 | 0 | 0 | 0 | 0 | 0 | 1 | 0 | 0 | 0 | 3 | 0 | 0 | PT16H0M0S | 0 | -1 | 1970-01-01T00:00:00 | 0 | 0 | 0 | 8 | 0 | 0 | 0 | 0 | 1 | 0 | 104 | Replanteo Columnas | 2026-02-19T09:00:00 | 2026-02-21T09:00:00 | PT16H0M0S | 0 |  | 5 | 1.2.1.9.2 | 109 |
| 105 | 105 | Compra materiales y Fabricación | 0 | 0 | 2026-01-22T03:41:00 | 1.2.1.9.3 | 1.2.1.9.3 | 5 | 500 | 2026-02-19T09:00:00 | 2026-02-26T14:00:00 | PT48H0M0S | 7 |  | 0 | 1 | 0 | 0 | 0 | 0 | 0 | 1 | 0 | 0 | 0 | 3 | 0 | 0 | PT48H0M0S | 0 | -1 | 1970-01-01T00:00:00 | 0 | 0 | 0 | 8 | 0 | 0 | 0 | 0 | 1 | 0 | 105 | Compra materiales y Fabricación | 2026-02-19T09:00:00 | 2026-02-26T14:00:00 | PT48H0M0S | 0 |  | 5 | 1.2.1.9.3 | 104 |
| 106 | 106 | Entrega Estructura metálica | 0 | 0 | 2026-01-22T03:41:00 | 1.2.1.9.4 | 1.2.1.9.4 | 5 | 500 | 2026-03-04T14:00:00 | 2026-03-06T14:00:00 | PT16H0M0S | 7 |  | 0 | 1 | 0 | 0 | 0 | 0 | 0 | 1 | 0 | 0 | 0 | 3 | 0 | 0 | PT16H0M0S | 0 | -1 | 1970-01-01T00:00:00 | 0 | 0 | 0 | 8 | 0 | 0 | 0 | 0 | 1 | 0 | 106 | Entrega Estructura metálica | 2026-03-04T14:00:00 | 2026-03-06T14:00:00 | PT16H0M0S | 0 |  | 5 | 1.2.1.9.4 | 94 |
| 107 | 107 | Llegada Columnas Metálicas | 0 | 0 | 2026-01-22T03:41:00 | 1.2.1.9.5 | 1.2.1.9.5 | 5 | 500 | 2026-02-27T14:00:00 | 2026-03-03T09:00:00 | PT16H0M0S | 7 |  | 0 | 1 | 0 | 0 | 0 | 0 | 0 | 1 | 0 | 0 | 0 | 3 | 0 | 0 | PT16H0M0S | 0 | -1 | 1970-01-01T00:00:00 | 0 | 0 | 0 | 8 | 0 | 0 | 0 | 0 | 1 | 0 | 107 | Llegada Columnas Metálicas | 2026-02-27T14:00:00 | 2026-03-03T09:00:00 | PT16H0M0S | 0 |  | 5 | 1.2.1.9.5 | 105 |
| 108 | 108 | Llegada Cerchas/Vigas Metálicas | 0 | 0 | 2026-01-22T03:41:00 | 1.2.1.9.6 | 1.2.1.9.6 | 5 | 500 | 2026-03-04T09:00:00 | 2026-03-06T09:00:00 | PT16H0M0S | 7 |  | 0 | 1 | 0 | 0 | 0 | 0 | 0 | 1 | 0 | 0 | 0 | 3 | 0 | 0 | PT16H0M0S | 0 | -1 | 1970-01-01T00:00:00 | 0 | 0 | 0 | 8 | 0 | 0 | 0 | 0 | 1 | 0 | 108 | Llegada Cerchas/Vigas Metálicas | 2026-03-04T09:00:00 | 2026-03-06T09:00:00 | PT16H0M0S | 0 |  | 5 | 1.2.1.9.6 | 107 |
| 109 | 109 | Replanteo Columnas | 0 | 0 | 2026-01-22T03:41:00 | 1.2.1.9.7 | 1.2.1.9.7 | 5 | 500 | 2026-02-17T09:00:00 | 2026-02-19T09:00:00 | PT16H0M0S | 7 |  | 0 | 1 | 0 | 0 | 0 | 0 | 0 | 1 | 0 | 0 | 0 | 3 | 0 | 0 | PT16H0M0S | 0 | -1 | 1970-01-01T00:00:00 | 0 | 0 | 0 | 8 | 0 | 0 | 0 | 0 | 1 | 0 | 109 | Replanteo Columnas | 2026-02-17T09:00:00 | 2026-02-19T09:00:00 | PT16H0M0S | 0 |  | 5 | 1.2.1.9.7 | 91 |
| 110 | 110 | Instalación Columnas | 0 | 0 | 2026-01-22T03:41:00 | 1.2.1.9.8 | 1.2.1.9.8 | 5 | 500 | 2026-03-03T09:00:00 | 2026-03-09T14:00:00 | PT40H0M0S | 7 |  | 0 | 1 | 0 | 0 | 0 | 0 | 0 | 1 | 0 | 0 | 0 | 3 | 0 | 0 | PT40H0M0S | 0 | -1 | 1970-01-01T00:00:00 | 0 | 0 | 0 | 8 | 0 | 0 | 0 | 0 | 1 | 0 | 110 | Instalación Columnas | 2026-03-03T09:00:00 | 2026-03-09T14:00:00 | PT40H0M0S | 0 |  | 5 | 1.2.1.9.8 | 107 |
| 111 | 111 | Instalación Cerchas/Vigas Metálicas h:3.50 - 3.60 | 0 | 0 | 2026-01-22T03:41:00 | 1.2.1.9.9 | 1.2.1.9.9 | 5 | 500 | 2026-03-06T09:00:00 | 2026-03-12T14:00:00 | PT40H0M0S | 7 |  | 0 | 1 | 0 | 0 | 0 | 0 | 0 | 1 | 0 | 0 | 0 | 3 | 0 | 0 | PT40H0M0S | 0 | -1 | 1970-01-01T00:00:00 | 0 | 0 | 0 | 8 | 0 | 0 | 0 | 0 | 1 | 0 | 111 | Instalación Cerchas/Vigas Metálicas h:3.50 - 3.60 | 2026-03-06T09:00:00 | 2026-03-12T14:00:00 | PT40H0M0S | 0 |  | 5 | 1.2.1.9.9 | 108, 110 |
| 112 | 112 | Entrega Estructura metálica | 0 | 0 | 2026-01-22T03:41:00 | 1.2.1.9.10 | 1.2.1.9.10 | 5 | 500 | 2026-03-10T09:00:00 | 2026-03-12T09:00:00 | PT16H0M0S | 7 |  | 0 | 1 | 0 | 0 | 0 | 0 | 0 | 1 | 0 | 0 | 0 | 3 | 0 | 0 | PT16H0M0S | 0 | -1 | 1970-01-01T00:00:00 | 0 | 0 | 0 | 8 | 0 | 0 | 0 | 0 | 1 | 0 | 112 | Entrega Estructura metálica | 2026-03-10T09:00:00 | 2026-03-12T09:00:00 | PT16H0M0S | 0 |  | 5 | 1.2.1.9.10 | 111 |
| 113 | 113 | Cuartos Ejes 4 - 7 (Zona 9A) | 1 | 0 | 2026-01-22T03:41:00 | 1.2.1.10 | 1.2.1.10 | 4 | 500 | 2025-11-19T09:00:00 | 2025-12-10T14:00:00 | PT136H0M0S | 7 | 2025-11-19T09:00:00 | 0 | 1 | 0 | 0 | 0 | 0 | 1 | 1 | 0 | 0 | 0 | 3 | 0 | 0 | PT136H0M0S | 0 | -1 | 1970-01-01T00:00:00 | 0 | 0 | 0 | 8 | 0 | 0 | 0 | 0 | 1 | 0 | 113 | Cuartos Ejes 4 - 7 (Zona 9A) | 2025-11-19T09:00:00 | 2025-12-10T14:00:00 | PT136H0M0S | 0 | True | 4 | 1.2.1.10 |  |
| 114 | 114 | Replanteo Columnas | 0 | 0 | 2026-01-22T03:41:00 | 1.2.1.10.1 | 1.2.1.10.1 | 5 | 500 | 2025-11-19T09:00:00 | 2025-11-21T09:00:00 | PT16H0M0S | 7 | 2025-11-19T09:00:00 | 0 | 1 | 0 | 0 | 0 | 0 | 0 | 1 | 0 | 0 | 0 | 3 | 0 | 0 | PT16H0M0S | 0 | -1 | 1970-01-01T00:00:00 | 0 | 0 | 0 | 8 | 0 | 0 | 0 | 0 | 1 | 0 | 114 | Replanteo Columnas | 2025-11-19T09:00:00 | 2025-11-21T09:00:00 | PT16H0M0S | 0 |  | 5 | 1.2.1.10.1 | 104 |
| 115 | 115 | Compra materiales y Fabricación | 0 | 0 | 2026-01-22T03:41:00 | 1.2.1.10.2 | 1.2.1.10.2 | 5 | 500 | 2025-11-19T09:00:00 | 2025-11-26T14:00:00 | PT48H0M0S | 7 | 2025-11-19T09:00:00 | 0 | 1 | 0 | 0 | 0 | 0 | 0 | 1 | 0 | 0 | 0 | 3 | 0 | 0 | PT48H0M0S | 0 | -1 | 1970-01-01T00:00:00 | 0 | 0 | 0 | 8 | 0 | 0 | 0 | 0 | 1 | 0 | 115 | Compra materiales y Fabricación | 2025-11-19T09:00:00 | 2025-11-26T14:00:00 | PT48H0M0S | 0 |  | 5 | 1.2.1.10.2 |  |
| 116 | 116 | Llegada Columnas Metálicas | 0 | 0 | 2026-01-22T03:41:00 | 1.2.1.10.3 | 1.2.1.10.3 | 5 | 500 | 2026-03-03T09:00:00 | 2026-03-05T09:00:00 | PT16H0M0S | 7 |  | 0 | 1 | 0 | 0 | 0 | 0 | 0 | 1 | 0 | 0 | 0 | 3 | 0 | 0 | PT16H0M0S | 0 | -1 | 1970-01-01T00:00:00 | 0 | 0 | 0 | 8 | 0 | 0 | 0 | 0 | 1 | 0 | 116 | Llegada Columnas Metálicas | 2026-03-03T09:00:00 | 2026-03-05T09:00:00 | PT16H0M0S | 0 |  | 5 | 1.2.1.10.3 | 128 |
| 117 | 117 | Instalación Cerchas/Vigas Metálicas h:3.50 - 3.60 | 0 | 0 | 2026-01-22T03:41:00 | 1.2.1.10.4 | 1.2.1.10.4 | 5 | 500 | 2026-03-09T14:00:00 | 2026-03-16T09:00:00 | PT40H0M0S | 7 |  | 0 | 1 | 0 | 0 | 0 | 0 | 0 | 1 | 0 | 0 | 0 | 3 | 0 | 0 | PT40H0M0S | 0 | -1 | 1970-01-01T00:00:00 | 0 | 0 | 0 | 8 | 0 | 0 | 0 | 0 | 1 | 0 | 117 | Instalación Cerchas/Vigas Metálicas h:3.50 - 3.60 | 2026-03-09T14:00:00 | 2026-03-16T09:00:00 | PT40H0M0S | 0 |  | 5 | 1.2.1.10.4 | 46, 132 |
| 118 | 118 | Cuartos Ejes 4 - 7 (Zona 9B) | 1 | 0 | 2026-01-22T03:41:00 | 1.2.1.11 | 1.2.1.11 | 4 | 500 | 2026-03-12T14:00:00 | 2026-04-07T14:00:00 | PT136H0M0S | 7 |  | 0 | 1 | 0 | 0 | 0 | 0 | 1 | 1 | 0 | 0 | 0 | 3 | 0 | 0 | PT136H0M0S | 0 | -1 | 1970-01-01T00:00:00 | 0 | 0 | 0 | 8 | 0 | 0 | 0 | 0 | 1 | 0 | 118 | Cuartos Ejes 4 - 7 (Zona 9B) | 2026-03-12T14:00:00 | 2026-04-07T14:00:00 | PT136H0M0S | 0 | True | 4 | 1.2.1.11 |  |
| 119 | 119 | Llegada Columnas Metálicas | 0 | 0 | 2026-01-22T03:41:00 | 1.2.1.11.1 | 1.2.1.11.1 | 5 | 500 | 2026-03-21T09:00:00 | 2026-03-25T14:00:00 | PT16H0M0S | 7 |  | 0 | 1 | 0 | 0 | 0 | 0 | 0 | 1 | 0 | 0 | 0 | 3 | 0 | 0 | PT16H0M0S | 0 | -1 | 1970-01-01T00:00:00 | 0 | 0 | 0 | 8 | 0 | 0 | 0 | 0 | 1 | 0 | 119 | Llegada Columnas Metálicas | 2026-03-21T09:00:00 | 2026-03-25T14:00:00 | PT16H0M0S | 0 |  | 5 | 1.2.1.11.1 | 137 |
| 120 | 120 | Llegada Cerchas/Vigas Metálicas | 0 | 0 | 2026-01-22T03:41:00 | 1.2.1.11.2 | 1.2.1.11.2 | 5 | 500 | 2026-03-26T14:00:00 | 2026-03-30T09:00:00 | PT16H0M0S | 7 |  | 0 | 1 | 0 | 0 | 0 | 0 | 0 | 1 | 0 | 0 | 0 | 3 | 0 | 0 | PT16H0M0S | 0 | -1 | 1970-01-01T00:00:00 | 0 | 0 | 0 | 8 | 0 | 0 | 0 | 0 | 1 | 0 | 120 | Llegada Cerchas/Vigas Metálicas | 2026-03-26T14:00:00 | 2026-03-30T09:00:00 | PT16H0M0S | 0 |  | 5 | 1.2.1.11.2 | 119 |
| 121 | 121 | Instalación Columnas | 0 | 0 | 2026-01-22T03:41:00 | 1.2.1.11.3 | 1.2.1.11.3 | 5 | 500 | 2026-03-25T14:00:00 | 2026-04-01T09:00:00 | PT40H0M0S | 7 |  | 0 | 1 | 0 | 0 | 0 | 0 | 0 | 1 | 0 | 0 | 0 | 3 | 0 | 0 | PT40H0M0S | 0 | -1 | 1970-01-01T00:00:00 | 0 | 0 | 0 | 8 | 0 | 0 | 0 | 0 | 1 | 0 | 121 | Instalación Columnas | 2026-03-25T14:00:00 | 2026-04-01T09:00:00 | PT40H0M0S | 0 |  | 5 | 1.2.1.11.3 | 119 |
| 122 | 122 | Instalación Cerchas/Vigas Metálicas h:3.50 - 3.60 | 0 | 0 | 2026-01-22T03:41:00 | 1.2.1.11.4 | 1.2.1.11.4 | 5 | 500 | 2026-03-30T09:00:00 | 2026-04-07T14:00:00 | PT40H0M0S | 7 |  | 0 | 1 | 0 | 0 | 0 | 0 | 0 | 1 | 0 | 0 | 0 | 3 | 0 | 0 | PT40H0M0S | 0 | -1 | 1970-01-01T00:00:00 | 0 | 0 | 0 | 8 | 0 | 0 | 0 | 0 | 1 | 0 | 122 | Instalación Cerchas/Vigas Metálicas h:3.50 - 3.60 | 2026-03-30T09:00:00 | 2026-04-07T14:00:00 | PT40H0M0S | 0 |  | 5 | 1.2.1.11.4 | 120, 121 |
| 123 | 123 | Entrega Estructura metálica | 0 | 0 | 2026-01-22T03:41:00 | 1.2.1.11.5 | 1.2.1.11.5 | 5 | 500 | 2026-04-01T14:00:00 | 2026-04-07T09:00:00 | PT16H0M0S | 7 |  | 0 | 1 | 0 | 0 | 0 | 0 | 0 | 1 | 0 | 0 | 0 | 3 | 0 | 0 | PT16H0M0S | 0 | -1 | 1970-01-01T00:00:00 | 0 | 0 | 0 | 8 | 0 | 0 | 0 | 0 | 1 | 0 | 123 | Entrega Estructura metálica | 2026-04-01T14:00:00 | 2026-04-07T09:00:00 | PT16H0M0S | 0 |  | 5 | 1.2.1.11.5 | 122 |
| 124 | 124 | Nivel Acceso | 1 | 0 | 2025-11-19T03:50:00 | 1.2.2 | 1.2.2 | 3 | 500 | 2025-11-19T09:00:00 | 2025-12-22T09:00:00 | PT196H0M0S | 7 | 2025-11-19T09:00:00 | 0 | 1 | 0 | 0 | 0 | 0 | 1 | 0 | 0 | 0 | 0 | 3 | 0 | 0 | PT196H0M0S | 0 | -1 | 1970-01-01T00:00:00 | 0 | 0 | 0 | 8 | 0 | 0 | 0 | 0 | 1 | 0 | 124 | Nivel Acceso | 2025-11-19T09:00:00 | 2025-12-22T09:00:00 | PT196H0M0S | 0 | True | 3 | 1.2.2 |  |
| 125 | 125 | Cuartos Ejes 1 - 4 | 1 | 0 | 2025-11-19T03:56:00 | 1.2.2.1 | 1.2.2.1 | 4 | 500 | 2025-11-19T09:00:00 | 2025-12-03T14:00:00 | PT92H0M0S | 7 | 2025-11-19T09:00:00 | 0 | 1 | 0 | 0 | 0 | 0 | 1 | 1 | 0 | 0 | 0 | 3 | 0 | 0 | PT92H0M0S | 0 | -1 | 1970-01-01T00:00:00 | 0 | 0 | 0 | 8 | 0 | 0 | 0 | 0 | 1 | 0 | 125 | Cuartos Ejes 1 - 4 | 2025-11-19T09:00:00 | 2025-12-03T14:00:00 | PT92H0M0S | 0 | True | 4 | 1.2.2.1 |  |
| 126 | 126 | Replanteo Columnas | 0 | 0 | 2025-11-19T03:56:00 | 1.2.2.1.1 | 1.2.2.1.1 | 5 | 500 | 2026-02-06T09:00:00 | 2026-02-09T14:00:00 | PT16H0M0S | 7 |  | 0 | 1 | 0 | 0 | 0 | 0 | 0 | 1 | 0 | 0 | 0 | 3 | 0 | 0 | PT16H0M0S | 0 | -1 | 1970-01-01T00:00:00 | 0 | 0 | 0 | 8 | 0 | 0 | 0 | 0 | 1 | 0 | 126 | Replanteo Columnas | 2026-02-06T09:00:00 | 2026-02-09T14:00:00 | PT16H0M0S | 0 |  | 5 | 1.2.2.1.1 | 63 |
| 127 | 127 | Compra materiales y Fabricación | 0 | 0 | 2025-11-19T03:56:00 | 1.2.2.1.2 | 1.2.2.1.2 | 5 | 500 | 2026-02-06T09:00:00 | 2026-02-11T14:00:00 | PT32H0M0S | 7 |  | 0 | 1 | 0 | 0 | 0 | 0 | 0 | 1 | 0 | 0 | 0 | 3 | 0 | 0 | PT32H0M0S | 0 | -1 | 1970-01-01T00:00:00 | 0 | 0 | 0 | 8 | 0 | 0 | 0 | 0 | 1 | 0 | 127 | Compra materiales y Fabricación | 2026-02-06T09:00:00 | 2026-02-11T14:00:00 | PT32H0M0S | 0 |  | 5 | 1.2.2.1.2 | 126 |
| 128 | 128 | Compra materiales y Fabricación | 0 | 0 | 2026-01-22T03:41:00 | 1.2.2.1.3 | 1.2.2.1.3 | 5 | 500 | 2026-02-21T09:00:00 | 2026-03-02T09:00:00 | PT48H0M0S | 7 |  | 0 | 1 | 0 | 0 | 0 | 0 | 0 | 1 | 0 | 0 | 0 | 3 | 0 | 0 | PT48H0M0S | 0 | -1 | 1970-01-01T00:00:00 | 0 | 0 | 0 | 8 | 0 | 0 | 0 | 0 | 1 | 0 | 128 | Compra materiales y Fabricación | 2026-02-21T09:00:00 | 2026-03-02T09:00:00 | PT48H0M0S | 0 |  | 5 | 1.2.2.1.3 |  |
| 129 | 129 | Llegada Columnas Metálicas | 0 | 0 | 2025-11-19T03:56:00 | 1.2.2.1.4 | 1.2.2.1.4 | 5 | 500 | 2026-02-12T14:00:00 | 2026-02-13T14:00:00 | PT8H0M0S | 7 |  | 0 | 1 | 0 | 0 | 0 | 0 | 0 | 1 | 0 | 0 | 0 | 3 | 0 | 0 | PT8H0M0S | 0 | -1 | 1970-01-01T00:00:00 | 0 | 0 | 0 | 8 | 0 | 0 | 0 | 0 | 1 | 0 | 129 | Llegada Columnas Metálicas | 2026-02-12T14:00:00 | 2026-02-13T14:00:00 | PT8H0M0S | 0 |  | 5 | 1.2.2.1.4 | 127 |
| 130 | 130 | Llegada Cerchas/Vigas Metálicas | 0 | 0 | 2025-11-19T03:56:00 | 1.2.2.1.5 | 1.2.2.1.5 | 5 | 500 | 2026-02-16T09:00:00 | 2026-02-17T09:00:00 | PT8H0M0S | 7 |  | 0 | 1 | 0 | 0 | 0 | 0 | 0 | 1 | 0 | 0 | 0 | 3 | 0 | 0 | PT8H0M0S | 0 | -1 | 1970-01-01T00:00:00 | 0 | 0 | 0 | 8 | 0 | 0 | 0 | 0 | 1 | 0 | 130 | Llegada Cerchas/Vigas Metálicas | 2026-02-16T09:00:00 | 2026-02-17T09:00:00 | PT8H0M0S | 0 |  | 5 | 1.2.2.1.5 | 129 |
| 131 | 131 | Instalación Columnas | 0 | 0 | 2025-11-19T03:56:00 | 1.2.2.1.6 | 1.2.2.1.6 | 5 | 500 | 2026-02-13T14:00:00 | 2026-02-17T09:00:00 | PT16H0M0S | 7 |  | 0 | 1 | 0 | 0 | 0 | 0 | 0 | 1 | 0 | 0 | 0 | 3 | 0 | 0 | PT16H0M0S | 0 | -1 | 1970-01-01T00:00:00 | 0 | 0 | 0 | 8 | 0 | 0 | 0 | 0 | 1 | 0 | 131 | Instalación Columnas | 2026-02-13T14:00:00 | 2026-02-17T09:00:00 | PT16H0M0S | 0 |  | 5 | 1.2.2.1.6 | 129 |
| 132 | 132 | Instalación Columnas | 0 | 0 | 2026-01-22T03:41:00 | 1.2.2.1.7 | 1.2.2.1.7 | 5 | 500 | 2026-03-05T09:00:00 | 2026-03-11T14:00:00 | PT40H0M0S | 7 |  | 0 | 1 | 0 | 0 | 0 | 0 | 0 | 1 | 0 | 0 | 0 | 3 | 0 | 0 | PT40H0M0S | 0 | -1 | 1970-01-01T00:00:00 | 0 | 0 | 0 | 8 | 0 | 0 | 0 | 0 | 1 | 0 | 132 | Instalación Columnas | 2026-03-05T09:00:00 | 2026-03-11T14:00:00 | PT40H0M0S | 0 |  | 5 | 1.2.2.1.7 |  |
| 133 | 133 | Instalación Cerchas/Vigas Metálicas h:3.50 - 3.60 | 0 | 0 | 2025-11-19T03:56:00 | 1.2.2.1.8 | 1.2.2.1.8 | 5 | 500 | 2026-02-17T09:00:00 | 2026-02-20T09:00:00 | PT24H0M0S | 7 |  | 0 | 1 | 0 | 0 | 0 | 0 | 0 | 1 | 0 | 0 | 0 | 3 | 0 | 0 | PT24H0M0S | 0 | -1 | 1970-01-01T00:00:00 | 0 | 0 | 0 | 8 | 0 | 0 | 0 | 0 | 1 | 0 | 133 | Instalación Cerchas/Vigas Metálicas h:3.50 - 3.60 | 2026-02-17T09:00:00 | 2026-02-20T09:00:00 | PT24H0M0S | 0 |  | 5 | 1.2.2.1.8 | 130, 131 |
| 134 | 134 | Entrega Estructura metálica | 0 | 0 | 2025-11-19T03:56:00 | 1.2.2.1.9 | 1.2.2.1.9 | 5 | 500 | 2026-02-18T14:00:00 | 2026-02-20T14:00:00 | PT16H0M0S | 7 |  | 0 | 1 | 0 | 0 | 0 | 0 | 0 | 1 | 0 | 0 | 0 | 3 | 0 | 0 | PT16H0M0S | 0 | -1 | 1970-01-01T00:00:00 | 0 | 0 | 0 | 8 | 0 | 0 | 0 | 0 | 1 | 0 | 134 | Entrega Estructura metálica | 2026-02-18T14:00:00 | 2026-02-20T14:00:00 | PT16H0M0S | 0 |  | 5 | 1.2.2.1.9 | 133 |
| 135 | 135 | Entrega Estructura metálica | 0 | 0 | 2026-01-22T03:41:00 | 1.2.2.1.10 | 1.2.2.1.10 | 5 | 500 | 2026-03-12T09:00:00 | 2026-03-14T09:00:00 | PT16H0M0S | 7 |  | 0 | 1 | 0 | 0 | 0 | 0 | 0 | 1 | 0 | 0 | 0 | 3 | 0 | 0 | PT16H0M0S | 0 | -1 | 1970-01-01T00:00:00 | 0 | 0 | 0 | 8 | 0 | 0 | 0 | 0 | 1 | 0 | 135 | Entrega Estructura metálica | 2026-03-12T09:00:00 | 2026-03-14T09:00:00 | PT16H0M0S | 0 |  | 5 | 1.2.2.1.10 | 117 |
| 136 | 136 | Cuartos Ejes 4-6 | 1 | 0 | 2025-11-19T03:57:00 | 1.2.2.2 | 1.2.2.2 | 4 | 500 | 2026-02-09T14:00:00 | 2026-02-25T09:00:00 | PT100H0M0S | 7 |  | 0 | 1 | 0 | 0 | 0 | 0 | 1 | 1 | 0 | 0 | 0 | 3 | 0 | 0 | PT100H0M0S | 0 | -1 | 1970-01-01T00:00:00 | 0 | 0 | 0 | 8 | 0 | 0 | 0 | 0 | 1 | 0 | 136 | Cuartos Ejes 4-6 | 2026-02-09T14:00:00 | 2026-02-25T09:00:00 | PT100H0M0S | 0 | True | 4 | 1.2.2.2 |  |
| 137 | 137 | Compra materiales y Fabricación | 0 | 0 | 2026-01-22T03:41:00 | 1.2.2.2.1 | 1.2.2.2.1 | 5 | 500 | 2026-03-12T14:00:00 | 2026-03-20T09:00:00 | PT48H0M0S | 7 |  | 0 | 1 | 0 | 0 | 0 | 0 | 0 | 1 | 0 | 0 | 0 | 3 | 0 | 0 | PT48H0M0S | 0 | -1 | 1970-01-01T00:00:00 | 0 | 0 | 0 | 8 | 0 | 0 | 0 | 0 | 1 | 0 | 137 | Compra materiales y Fabricación | 2026-03-12T14:00:00 | 2026-03-20T09:00:00 | PT48H0M0S | 0 |  | 5 | 1.2.2.2.1 | 14 |
| 138 | 138 | Compra materiales y Fabricación | 0 | 0 | 2025-11-19T03:57:00 | 1.2.2.2.2 | 1.2.2.2.2 | 5 | 500 | 2026-02-10T14:00:00 | 2026-02-16T09:00:00 | PT32H0M0S | 7 |  | 0 | 1 | 0 | 0 | 0 | 0 | 0 | 1 | 0 | 0 | 0 | 3 | 0 | 0 | PT32H0M0S | 0 | -1 | 1970-01-01T00:00:00 | 0 | 0 | 0 | 8 | 0 | 0 | 0 | 0 | 1 | 0 | 138 | Compra materiales y Fabricación | 2026-02-10T14:00:00 | 2026-02-16T09:00:00 | PT32H0M0S | 0 |  | 5 | 1.2.2.2.2 | 154 |
| 139 | 139 | Instalación Columnas | 0 | 0 | 2025-11-19T03:57:00 | 1.2.2.2.3 | 1.2.2.2.3 | 5 | 500 | 2026-02-18T09:00:00 | 2026-02-20T09:00:00 | PT16H0M0S | 7 |  | 0 | 1 | 0 | 0 | 0 | 0 | 0 | 1 | 0 | 0 | 0 | 3 | 0 | 0 | PT16H0M0S | 0 | -1 | 1970-01-01T00:00:00 | 0 | 0 | 0 | 8 | 0 | 0 | 0 | 0 | 1 | 0 | 139 | Instalación Columnas | 2026-02-18T09:00:00 | 2026-02-20T09:00:00 | PT16H0M0S | 0 |  | 5 | 1.2.2.2.3 | 49 |
| 140 | 140 | Entrega Estructura metálica | 0 | 0 | 2025-11-19T03:57:00 | 1.2.2.2.4 | 1.2.2.2.4 | 5 | 500 | 2026-02-23T09:00:00 | 2026-02-25T09:00:00 | PT16H0M0S | 7 |  | 0 | 1 | 0 | 0 | 0 | 0 | 0 | 1 | 0 | 0 | 0 | 3 | 0 | 0 | PT16H0M0S | 0 | -1 | 1970-01-01T00:00:00 | 0 | 0 | 0 | 8 | 0 | 0 | 0 | 0 | 1 | 0 | 140 | Entrega Estructura metálica | 2026-02-23T09:00:00 | 2026-02-25T09:00:00 | PT16H0M0S | 0 |  | 5 | 1.2.2.2.4 | 161 |

| UID | ID | Name | Type | IsNull | CreateDate | WBS | OutlineNumber | OutlineLevel | Priority | Start | Finish | Duration | DurationFormat | ResumeValid | EffortDriven | Recurring | OverAllocated | Estimated | Milestone | Summary | Critical | IsSubproject | IsSubprojectReadOnly | ExternalTask | FixedCostAccrual | PercentComplete | PercentWorkComplete | RemainingDuration | ConstraintType | CalendarUID | ConstraintDate | LevelAssignments | LevelingCanSplit | LevelingDelay | LevelingDelayFormat | IgnoreResourceCalendar | HideBar | Rollup | EarnedValueMethod | Active | Manual | id | name | start | finish | duration | percentComplete | isSummary | outlineLevel | wbs | isMilestone | predecessors |
| --- | --- | --- | --- | --- | --- | --- | --- | --- | --- | --- | --- | --- | --- | --- | --- | --- | --- | --- | --- | --- | --- | --- | --- | --- | --- | --- | --- | --- | --- | --- | --- | --- | --- | --- | --- | --- | --- | --- | --- | --- | --- | --- | --- | --- | --- | --- | --- | --- | --- | --- | --- | --- |
| 141 | 141 | Compra materiales y Fabricación | 0 | 0 | 2025-11-19T03:57:00 | 1.2.2.2.5 | 1.2.2.2.5 | 5 | 500 | 2026-02-23T14:00:00 | 2026-02-27T14:00:00 | PT32H0M0S | 7 | 0 | 1 | 0 | 0 | 0 | 0 | 0 | 1 | 0 | 0 | 0 | 3 | 0 | 0 | PT32H0M0S | 0 | -1 | 1970-01-01T00:00:00 | 0 | 0 | 0 | 8 | 0 | 0 | 0 | 0 | 1 | 0 | 141 | Compra materiales y Fabricación | 2026-02-23T14:00:00 | 2026-02-27T14:00:00 | PT32H0M0S | 0 |  | 5 | 1.2.2.2.5 |  | 157 |
| 142 | 142 | Llegada Columnas Metálicas | 0 | 0 | 2025-11-19T03:57:00 | 1.2.2.2.6 | 1.2.2.2.6 | 5 | 500 | 2026-03-02T09:00:00 | 2026-03-03T09:00:00 | PT8H0M0S | 7 | 0 | 1 | 0 | 0 | 0 | 0 | 0 | 1 | 0 | 0 | 0 | 3 | 0 | 0 | PT8H0M0S | 0 | -1 | 1970-01-01T00:00:00 | 0 | 0 | 0 | 8 | 0 | 0 | 0 | 0 | 1 | 0 | 142 | Llegada Columnas Metálicas | 2026-03-02T09:00:00 | 2026-03-03T09:00:00 | PT8H0M0S | 0 |  | 5 | 1.2.2.2.6 |  | 141 |
| 143 | 143 | Llegada Cerchas/Vigas Metálicas | 0 | 0 | 2025-11-19T03:57:00 | 1.2.2.2.7 | 1.2.2.2.7 | 5 | 500 | 2026-03-04T09:00:00 | 2026-03-05T09:00:00 | PT8H0M0S | 7 | 0 | 1 | 0 | 0 | 0 | 0 | 0 | 1 | 0 | 0 | 0 | 3 | 0 | 0 | PT8H0M0S | 0 | -1 | 1970-01-01T00:00:00 | 0 | 0 | 0 | 8 | 0 | 0 | 0 | 0 | 1 | 0 | 143 | Llegada Cerchas/Vigas Metálicas | 2026-03-04T09:00:00 | 2026-03-05T09:00:00 | PT8H0M0S | 0 |  | 5 | 1.2.2.2.7 |  | 142 |
| 144 | 144 | Instalación Columnas | 0 | 0 | 2025-11-19T03:57:00 | 1.2.2.2.8 | 1.2.2.2.8 | 5 | 500 | 2026-03-03T09:00:00 | 2026-03-05T09:00:00 | PT16H0M0S | 7 | 0 | 1 | 0 | 0 | 0 | 0 | 0 | 1 | 0 | 0 | 0 | 3 | 0 | 0 | PT16H0M0S | 0 | -1 | 1970-01-01T00:00:00 | 0 | 0 | 0 | 8 | 0 | 0 | 0 | 0 | 1 | 0 | 144 | Instalación Columnas | 2026-03-03T09:00:00 | 2026-03-05T09:00:00 | PT16H0M0S | 0 |  | 5 | 1.2.2.2.8 |  | 142 |
| 145 | 145 | Instalación Cerchas/Vigas Metálicas h:3.50 - 3.60 | 0 | 0 | 2025-11-19T03:57:00 | 1.2.2.2.9 | 1.2.2.2.9 | 5 | 500 | 2026-03-05T09:00:00 | 2026-03-09T14:00:00 | PT24H0M0S | 7 | 0 | 1 | 0 | 0 | 0 | 0 | 0 | 1 | 0 | 0 | 0 | 3 | 0 | 0 | PT24H0M0S | 0 | -1 | 1970-01-01T00:00:00 | 0 | 0 | 0 | 8 | 0 | 0 | 0 | 0 | 1 | 0 | 145 | Instalación Cerchas/Vigas Metálicas h:3.50 - 3.60 | 2026-03-05T09:00:00 | 2026-03-09T14:00:00 | PT24H0M0S | 0 |  | 5 | 1.2.2.2.9 |  | 143, 144 |
| 146 | 146 | Entrega Estructura metálica | 0 | 0 | 2025-11-19T03:57:00 | 1.2.2.2.10 | 1.2.2.2.10 | 5 | 500 | 2026-03-06T14:00:00 | 2026-03-10T09:00:00 | PT16H0M0S | 7 | 0 | 1 | 0 | 0 | 0 | 0 | 0 | 1 | 0 | 0 | 0 | 3 | 0 | 0 | PT16H0M0S | 0 | -1 | 1970-01-01T00:00:00 | 0 | 0 | 0 | 8 | 0 | 0 | 0 | 0 | 1 | 0 | 146 | Entrega Estructura metálica | 2026-03-06T14:00:00 | 2026-03-10T09:00:00 | PT16H0M0S | 0 |  | 5 | 1.2.2.2.10 |  | 145 |
| 147 | 147 | Cuartos Ejes 7-8 | 1 | 0 | 2025-11-19T03:59:00 | 1.2.2.3 | 1.2.2.3 | 4 | 500 | 2026-02-11T14:00:00 | 2026-02-26T09:00:00 | PT92H0M0S | 7 | 0 | 1 | 0 | 0 | 0 | 0 | 1 | 1 | 0 | 0 | 0 | 3 | 0 | 0 | PT92H0M0S | 0 | -1 | 1970-01-01T00:00:00 | 0 | 0 | 0 | 8 | 0 | 0 | 0 | 0 | 1 | 0 | 147 | Cuartos Ejes 7-8 | 2026-02-11T14:00:00 | 2026-02-26T09:00:00 | PT92H0M0S | 0 | True | 4 | 1.2.2.3 |  |  |
| 148 | 148 | Replanteo Columnas | 0 | 0 | 2025-11-19T03:59:00 | 1.2.2.3.1 | 1.2.2.3.1 | 5 | 500 | 2026-02-11T14:00:00 | 2026-02-13T14:00:00 | PT16H0M0S | 7 | 0 | 1 | 0 | 0 | 0 | 0 | 0 | 1 | 0 | 0 | 0 | 3 | 0 | 0 | PT16H0M0S | 0 | -1 | 1970-01-01T00:00:00 | 0 | 0 | 0 | 8 | 0 | 0 | 0 | 0 | 1 | 0 | 148 | Replanteo Columnas | 2026-02-11T14:00:00 | 2026-02-13T14:00:00 | PT16H0M0S | 0 |  | 5 | 1.2.2.3.1 |  | 154 |
| 149 | 149 | Compra materiales y Fabricación | 0 | 0 | 2025-11-19T03:59:00 | 1.2.2.3.2 | 1.2.2.3.2 | 5 | 500 | 2026-02-11T14:00:00 | 2026-02-17T09:00:00 | PT32H0M0S | 7 | 0 | 1 | 0 | 0 | 0 | 0 | 0 | 1 | 0 | 0 | 0 | 3 | 0 | 0 | PT32H0M0S | 0 | -1 | 1970-01-01T00:00:00 | 0 | 0 | 0 | 8 | 0 | 0 | 0 | 0 | 1 | 0 | 149 | Compra materiales y Fabricación | 2026-02-11T14:00:00 | 2026-02-17T09:00:00 | PT32H0M0S | 0 |  | 5 | 1.2.2.3.2 |  | 148 |
| 150 | 150 | Llegada Columnas Metálicas | 0 | 0 | 2025-11-19T03:59:00 | 1.2.2.3.3 | 1.2.2.3.3 | 5 | 500 | 2026-02-18T09:00:00 | 2026-02-19T09:00:00 | PT8H0M0S | 7 | 0 | 1 | 0 | 0 | 0 | 0 | 0 | 1 | 0 | 0 | 0 | 3 | 0 | 0 | PT8H0M0S | 0 | -1 | 1970-01-01T00:00:00 | 0 | 0 | 0 | 8 | 0 | 0 | 0 | 0 | 1 | 0 | 150 | Llegada Columnas Metálicas | 2026-02-18T09:00:00 | 2026-02-19T09:00:00 | PT8H0M0S | 0 |  | 5 | 1.2.2.3.3 |  | 149 |
| 151 | 151 | Llegada Cerchas/Vigas Metálicas | 0 | 0 | 2025-11-19T03:59:00 | 1.2.2.3.4 | 1.2.2.3.4 | 5 | 500 | 2026-02-20T09:00:00 | 2026-02-21T09:00:00 | PT8H0M0S | 7 | 0 | 1 | 0 | 0 | 0 | 0 | 0 | 1 | 0 | 0 | 0 | 3 | 0 | 0 | PT8H0M0S | 0 | -1 | 1970-01-01T00:00:00 | 0 | 0 | 0 | 8 | 0 | 0 | 0 | 0 | 1 | 0 | 151 | Llegada Cerchas/Vigas Metálicas | 2026-02-20T09:00:00 | 2026-02-21T09:00:00 | PT8H0M0S | 0 |  | 5 | 1.2.2.3.4 |  | 150 |
| 152 | 152 | Instalación Columnas | 0 | 0 | 2025-11-19T03:59:00 | 1.2.2.3.5 | 1.2.2.3.5 | 5 | 500 | 2026-02-19T09:00:00 | 2026-02-21T09:00:00 | PT16H0M0S | 7 | 0 | 1 | 0 | 0 | 0 | 0 | 0 | 1 | 0 | 0 | 0 | 3 | 0 | 0 | PT16H0M0S | 0 | -1 | 1970-01-01T00:00:00 | 0 | 0 | 0 | 8 | 0 | 0 | 0 | 0 | 1 | 0 | 152 | Instalación Columnas | 2026-02-19T09:00:00 | 2026-02-21T09:00:00 | PT16H0M0S | 0 |  | 5 | 1.2.2.3.5 |  | 150 |
| 153 | 153 | Instalación Cerchas/Vigas Metálicas h:3.50 - 3.60 | 0 | 0 | 2025-11-19T03:59:00 | 1.2.2.3.6 | 1.2.2.3.6 | 5 | 500 | 2026-02-21T09:00:00 | 2026-02-25T14:00:00 | PT24H0M0S | 7 | 0 | 1 | 0 | 0 | 0 | 0 | 0 | 1 | 0 | 0 | 0 | 3 | 0 | 0 | PT24H0M0S | 0 | -1 | 1970-01-01T00:00:00 | 0 | 0 | 0 | 8 | 0 | 0 | 0 | 0 | 1 | 0 | 153 | Instalación Cerchas/Vigas Metálicas h:3.50 - 3.60 | 2026-02-21T09:00:00 | 2026-02-25T14:00:00 | PT24H0M0S | 0 |  | 5 | 1.2.2.3.6 |  | 151, 152 |
| 154 | 154 | Replanteo Columnas | 0 | 0 | 2025-11-19T03:57:00 | 1.2.2.3.7 | 1.2.2.3.7 | 5 | 500 | 2026-02-09T14:00:00 | 2026-02-11T14:00:00 | PT16H0M0S | 7 | 0 | 1 | 0 | 0 | 0 | 0 | 0 | 1 | 0 | 0 | 0 | 3 | 0 | 0 | PT16H0M0S | 0 | -1 | 1970-01-01T00:00:00 | 0 | 0 | 0 | 8 | 0 | 0 | 0 | 0 | 1 | 0 | 154 | Replanteo Columnas | 2026-02-09T14:00:00 | 2026-02-11T14:00:00 | PT16H0M0S | 0 |  | 5 | 1.2.2.3.7 |  |  |
| 155 | 155 | Entrega Estructura metálica | 0 | 0 | 2025-11-19T03:59:00 | 1.2.2.3.8 | 1.2.2.3.8 | 5 | 500 | 2026-02-24T09:00:00 | 2026-02-26T09:00:00 | PT16H0M0S | 7 | 0 | 1 | 0 | 0 | 0 | 0 | 0 | 1 | 0 | 0 | 0 | 3 | 0 | 0 | PT16H0M0S | 0 | -1 | 1970-01-01T00:00:00 | 0 | 0 | 0 | 8 | 0 | 0 | 0 | 0 | 1 | 0 | 155 | Entrega Estructura metálica | 2026-02-24T09:00:00 | 2026-02-26T09:00:00 | PT16H0M0S | 0 |  | 5 | 1.2.2.3.8 |  | 153 |
| 156 | 156 | Cuartos Ejes 8-9 C-E | 1 | 0 | 2025-11-19T03:59:00 | 1.2.2.4 | 1.2.2.4 | 4 | 500 | 2026-02-13T14:00:00 | 2026-03-09T14:00:00 | PT144H0M0S | 7 | 0 | 1 | 0 | 0 | 0 | 0 | 1 | 1 | 0 | 0 | 0 | 3 | 0 | 0 | PT144H0M0S | 0 | -1 | 1970-01-01T00:00:00 | 0 | 0 | 0 | 8 | 0 | 0 | 0 | 0 | 1 | 0 | 156 | Cuartos Ejes 8-9 C-E | 2026-02-13T14:00:00 | 2026-03-09T14:00:00 | PT144H0M0S | 0 | True | 4 | 1.2.2.4 |  |  |
| 157 | 157 | Replanteo Columnas | 0 | 0 | 2025-11-19T03:57:00 | 1.2.2.4.1 | 1.2.2.4.1 | 5 | 500 | 2026-02-21T09:00:00 | 2026-02-24T14:00:00 | PT16H0M0S | 7 | 0 | 1 | 0 | 0 | 0 | 0 | 0 | 1 | 0 | 0 | 0 | 3 | 0 | 0 | PT16H0M0S | 0 | -1 | 1970-01-01T00:00:00 | 0 | 0 | 0 | 8 | 0 | 0 | 0 | 0 | 1 | 0 | 157 | Replanteo Columnas | 2026-02-21T09:00:00 | 2026-02-24T14:00:00 | PT16H0M0S | 0 |  | 5 | 1.2.2.4.1 |  | 163 |
| 158 | 158 | Llegada Cerchas/Vigas Metálicas | 0 | 0 | 2025-11-19T03:57:00 | 1.2.2.4.2 | 1.2.2.4.2 | 5 | 500 | 2026-02-19T09:00:00 | 2026-02-20T09:00:00 | PT8H0M0S | 7 | 0 | 1 | 0 | 0 | 0 | 0 | 0 | 1 | 0 | 0 | 0 | 3 | 0 | 0 | PT8H0M0S | 0 | -1 | 1970-01-01T00:00:00 | 0 | 0 | 0 | 8 | 0 | 0 | 0 | 0 | 1 | 0 | 158 | Llegada Cerchas/Vigas Metálicas | 2026-02-19T09:00:00 | 2026-02-20T09:00:00 | PT8H0M0S | 0 |  | 5 | 1.2.2.4.2 |  | 49 |
| 159 | 159 | Compra materiales y Fabricación | 0 | 0 | 2025-11-19T03:59:00 | 1.2.2.4.3 | 1.2.2.4.3 | 5 | 500 | 2026-02-13T14:00:00 | 2026-02-19T09:00:00 | PT32H0M0S | 7 | 0 | 1 | 0 | 0 | 0 | 0 | 0 | 1 | 0 | 0 | 0 | 3 | 0 | 0 | PT32H0M0S | 0 | -1 | 1970-01-01T00:00:00 | 0 | 0 | 0 | 8 | 0 | 0 | 0 | 0 | 1 | 0 | 159 | Compra materiales y Fabricación | 2026-02-13T14:00:00 | 2026-02-19T09:00:00 | PT32H0M0S | 0 |  | 5 | 1.2.2.4.3 |  | 182 |
| 160 | 160 | Instalación Columnas | 0 | 0 | 2025-11-19T03:59:00 | 1.2.2.4.4 | 1.2.2.4.4 | 5 | 500 | 2026-02-21T09:00:00 | 2026-03-04T09:00:00 | PT64H0M0S | 7 | 0 | 1 | 0 | 0 | 0 | 0 | 0 | 1 | 0 | 0 | 0 | 3 | 0 | 0 | PT64H0M0S | 0 | -1 | 1970-01-01T00:00:00 | 0 | 0 | 0 | 8 | 0 | 0 | 0 | 0 | 1 | 0 | 160 | Instalación Columnas | 2026-02-21T09:00:00 | 2026-03-04T09:00:00 | PT64H0M0S | 0 |  | 5 | 1.2.2.4.4 |  | 50 |
| 161 | 161 | Instalación Cerchas/Vigas Metálicas h:3.50 - 3.60 | 0 | 0 | 2025-11-19T03:57:00 | 1.2.2.4.5 | 1.2.2.4.5 | 5 | 500 | 2026-02-20T09:00:00 | 2026-02-24T14:00:00 | PT24H0M0S | 7 | 0 | 1 | 0 | 0 | 0 | 0 | 0 | 1 | 0 | 0 | 0 | 3 | 0 | 0 | PT24H0M0S | 0 | -1 | 1970-01-01T00:00:00 | 0 | 0 | 0 | 8 | 0 | 0 | 0 | 0 | 1 | 0 | 161 | Instalación Cerchas/Vigas Metálicas h:3.50 - 3.60 | 2026-02-20T09:00:00 | 2026-02-24T14:00:00 | PT24H0M0S | 0 |  | 5 | 1.2.2.4.5 |  |  |
| 162 | 162 | Cuartos Ejes 8-9 A-B | 1 | 0 | 2026-01-21T02:50:00 | 1.2.2.5 | 1.2.2.5 | 4 | 500 | 2026-02-17T09:00:00 | 2026-03-05T14:00:00 | PT108H0M0S | 7 | 0 | 1 | 0 | 0 | 0 | 0 | 1 | 1 | 0 | 0 | 0 | 3 | 0 | 0 | PT108H0M0S | 0 | -1 | 1970-01-01T00:00:00 | 0 | 0 | 0 | 8 | 0 | 0 | 0 | 0 | 1 | 0 | 162 | Cuartos Ejes 8-9 A-B | 2026-02-17T09:00:00 | 2026-03-05T14:00:00 | PT108H0M0S | 0 | True | 4 | 1.2.2.5 |  |  |
| 163 | 163 | Replanteo Columnas | 0 | 0 | 2026-01-21T02:50:00 | 1.2.2.5.1 | 1.2.2.5.1 | 5 | 500 | 2026-02-17T09:00:00 | 2026-02-19T09:00:00 | PT16H0M0S | 7 | 0 | 1 | 0 | 0 | 0 | 0 | 0 | 1 | 0 | 0 | 0 | 3 | 0 | 0 | PT16H0M0S | 0 | -1 | 1970-01-01T00:00:00 | 0 | 0 | 0 | 8 | 0 | 0 | 0 | 0 | 1 | 0 | 163 | Replanteo Columnas | 2026-02-17T09:00:00 | 2026-02-19T09:00:00 | PT16H0M0S | 0 |  | 5 | 1.2.2.5.1 |  | 182 |
| 164 | 164 | Cuartos Ejes 6-7 | 1 | 0 | 2025-11-19T03:57:00 | 1.2.2.6 | 1.2.2.6 | 4 | 500 | 2026-02-21T09:00:00 | 2026-03-10T09:00:00 | PT100H0M0S | 7 | 0 | 1 | 0 | 0 | 0 | 0 | 1 | 1 | 0 | 0 | 0 | 3 | 0 | 0 | PT100H0M0S | 0 | -1 | 1970-01-01T00:00:00 | 0 | 0 | 0 | 8 | 0 | 0 | 0 | 0 | 1 | 0 | 164 | Cuartos Ejes 6-7 | 2026-02-21T09:00:00 | 2026-03-10T09:00:00 | PT100H0M0S | 0 | True | 4 | 1.2.2.6 |  |  |
| 165 | 165 | Compra materiales y Fabricación | 0 | 0 | 2026-01-21T02:50:00 | 1.2.2.6.1 | 1.2.2.6.1 | 5 | 500 | 2026-02-17T09:00:00 | 2026-02-21T09:00:00 | PT32H0M0S | 7 | 0 | 1 | 0 | 0 | 0 | 0 | 0 | 1 | 0 | 0 | 0 | 3 | 0 | 0 | PT32H0M0S | 0 | -1 | 1970-01-01T00:00:00 | 0 | 0 | 0 | 8 | 0 | 0 | 0 | 0 | 1 | 0 | 165 | Compra materiales y Fabricación | 2026-02-17T09:00:00 | 2026-02-21T09:00:00 | PT32H0M0S | 0 |  | 5 | 1.2.2.6.1 |  | 163 |
| 166 | 166 | Llegada Columnas Metálicas | 0 | 0 | 2026-01-21T02:50:00 | 1.2.2.6.2 | 1.2.2.6.2 | 5 | 500 | 2026-02-23T14:00:00 | 2026-02-24T14:00:00 | PT8H0M0S | 7 | 0 | 1 | 0 | 0 | 0 | 0 | 0 | 1 | 0 | 0 | 0 | 3 | 0 | 0 | PT8H0M0S | 0 | -1 | 1970-01-01T00:00:00 | 0 | 0 | 0 | 8 | 0 | 0 | 0 | 0 | 1 | 0 | 166 | Llegada Columnas Metálicas | 2026-02-23T14:00:00 | 2026-02-24T14:00:00 | PT8H0M0S | 0 |  | 5 | 1.2.2.6.2 |  | 165 |
| 167 | 167 | Llegada Cerchas/Vigas Metálicas | 0 | 0 | 2026-01-21T02:50:00 | 1.2.2.6.3 | 1.2.2.6.3 | 5 | 500 | 2026-02-25T14:00:00 | 2026-02-26T14:00:00 | PT8H0M0S | 7 | 0 | 1 | 0 | 0 | 0 | 0 | 0 | 1 | 0 | 0 | 0 | 3 | 0 | 0 | PT8H0M0S | 0 | -1 | 1970-01-01T00:00:00 | 0 | 0 | 0 | 8 | 0 | 0 | 0 | 0 | 1 | 0 | 167 | Llegada Cerchas/Vigas Metálicas | 2026-02-25T14:00:00 | 2026-02-26T14:00:00 | PT8H0M0S | 0 |  | 5 | 1.2.2.6.3 |  | 166 |
| 168 | 168 | Instalación Columnas | 0 | 0 | 2026-01-21T02:50:00 | 1.2.2.6.4 | 1.2.2.6.4 | 5 | 500 | 2026-02-24T14:00:00 | 2026-03-03T09:00:00 | PT40H0M0S | 7 | 0 | 1 | 0 | 0 | 0 | 0 | 0 | 1 | 0 | 0 | 0 | 3 | 0 | 0 | PT40H0M0S | 0 | -1 | 1970-01-01T00:00:00 | 0 | 0 | 0 | 8 | 0 | 0 | 0 | 0 | 1 | 0 | 168 | Instalación Columnas | 2026-02-24T14:00:00 | 2026-03-03T09:00:00 | PT40H0M0S | 0 |  | 5 | 1.2.2.6.4 |  | 166 |
| 169 | 169 | Instalación Cerchas/Vigas Metálicas h:3.50 - 3.60 | 0 | 0 | 2026-01-21T02:50:00 | 1.2.2.6.5 | 1.2.2.6.5 | 5 | 500 | 2026-02-27T09:00:00 | 2026-03-05T14:00:00 | PT40H0M0S | 7 | 0 | 1 | 0 | 0 | 0 | 0 | 0 | 1 | 0 | 0 | 0 | 3 | 0 | 0 | PT40H0M0S | 0 | -1 | 1970-01-01T00:00:00 | 0 | 0 | 0 | 8 | 0 | 0 | 0 | 0 | 1 | 0 | 169 | Instalación Cerchas/Vigas Metálicas h:3.50 - 3.60 | 2026-02-27T09:00:00 | 2026-03-05T14:00:00 | PT40H0M0S | 0 |  | 5 | 1.2.2.6.5 |  | 167, 168 |
| 170 | 170 | Entrega Estructura metálica | 0 | 0 | 2026-01-21T02:50:00 | 1.2.2.6.6 | 1.2.2.6.6 | 5 | 500 | 2026-03-03T09:00:00 | 2026-03-05T09:00:00 | PT16H0M0S | 7 | 0 | 1 | 0 | 0 | 0 | 0 | 0 | 1 | 0 | 0 | 0 | 3 | 0 | 0 | PT16H0M0S | 0 | -1 | 1970-01-01T00:00:00 | 0 | 0 | 0 | 8 | 0 | 0 | 0 | 0 | 1 | 0 | 170 | Entrega Estructura metálica | 2026-03-03T09:00:00 | 2026-03-05T09:00:00 | PT16H0M0S | 0 |  | 5 | 1.2.2.6.6 |  | 169 |
| 171 | 171 | Edificio Ascendente 2 | 1 | 0 | 2025-12-01T11:24:00 | 1.3 | 1.3 | 2 | 500 | 2026-01-22T09:00:00 | 2026-03-31T14:00:00 | PT420H0M0S | 7 | 0 | 1 | 0 | 0 | 0 | 0 | 1 | 1 | 0 | 0 | 0 | 3 | 0 | 0 | PT420H0M0S | 0 | -1 | 1970-01-01T00:00:00 | 0 | 0 | 0 | 8 | 0 | 0 | 0 | 0 | 1 | 0 | 171 | Edificio Ascendente 2 | 2026-01-22T09:00:00 | 2026-03-31T14:00:00 | PT420H0M0S | 0 | True | 2 | 1.3 |  |  |
| 172 | 172 | Nivel Acceso | 1 | 0 | 2025-12-01T11:24:00 | 1.3.1 | 1.3.1 | 3 | 500 | 2026-01-22T09:00:00 | 2026-02-16T14:00:00 | PT156H0M0S | 7 | 0 | 1 | 0 | 0 | 0 | 0 | 1 | 1 | 0 | 0 | 0 | 3 | 0 | 0 | PT156H0M0S | 0 | -1 | 1970-01-01T00:00:00 | 0 | 0 | 0 | 8 | 0 | 0 | 0 | 0 | 1 | 0 | 172 | Nivel Acceso | 2026-01-22T09:00:00 | 2026-02-16T14:00:00 | PT156H0M0S | 0 | True | 3 | 1.3.1 |  |  |
| 173 | 173 | Cuartos Ejes M-P --- 11-12 | 1 | 0 | 2025-12-01T11:29:00 | 1.3.1.1 | 1.3.1.1 | 4 | 500 | 2026-01-22T09:00:00 | 2026-02-16T14:00:00 | PT156H0M0S | 7 | 0 | 1 | 0 | 0 | 0 | 0 | 1 | 1 | 0 | 0 | 0 | 3 | 0 | 0 | PT156H0M0S | 0 | -1 | 1970-01-01T00:00:00 | 0 | 0 | 0 | 8 | 0 | 0 | 0 | 0 | 1 | 0 | 173 | Cuartos Ejes M-P --- 11-12 | 2026-01-22T09:00:00 | 2026-02-16T14:00:00 | PT156H0M0S | 0 | True | 4 | 1.3.1.1 |  |  |
| 174 | 174 | Replanteo Columnas | 0 | 0 | 2025-12-01T11:29:00 | 1.3.1.1.1 | 1.3.1.1.1 | 5 | 500 | 2026-01-22T09:00:00 | 2026-01-24T09:00:00 | PT16H0M0S | 7 | 0 | 1 | 0 | 0 | 0 | 0 | 0 | 1 | 0 | 0 | 0 | 3 | 0 | 0 | PT16H0M0S | 0 | -1 | 1970-01-01T00:00:00 | 0 | 0 | 0 | 8 | 0 | 0 | 0 | 0 | 1 | 0 | 174 | Replanteo Columnas | 2026-01-22T09:00:00 | 2026-01-24T09:00:00 | PT16H0M0S | 0 |  | 5 | 1.3.1.1.1 |  | 56 |
| 175 | 175 | Compra materiales y Fabricación | 0 | 0 | 2025-12-01T11:24:00 | 1.3.1.1.2 | 1.3.1.1.2 | 5 | 500 | 2026-01-22T09:00:00 | 2026-01-27T14:00:00 | PT32H0M0S | 7 | 0 | 1 | 0 | 0 | 0 | 0 | 0 | 1 | 0 | 0 | 0 | 3 | 0 | 0 | PT32H0M0S | 0 | -1 | 1970-01-01T00:00:00 | 0 | 0 | 0 | 8 | 0 | 0 | 0 | 0 | 1 | 0 | 175 | Compra materiales y Fabricación | 2026-01-22T09:00:00 | 2026-01-27T14:00:00 | PT32H0M0S | 0 |  | 5 | 1.3.1.1.2 |  | 174 |
| 176 | 176 | Llegada Columnas Metálicas | 0 | 0 | 2025-12-01T11:24:00 | 1.3.1.1.3 | 1.3.1.1.3 | 5 | 500 | 2026-01-28T14:00:00 | 2026-01-29T14:00:00 | PT8H0M0S | 7 | 0 | 1 | 0 | 0 | 0 | 0 | 0 | 1 | 0 | 0 | 0 | 3 | 0 | 0 | PT8H0M0S | 0 | -1 | 1970-01-01T00:00:00 | 0 | 0 | 0 | 8 | 0 | 0 | 0 | 0 | 1 | 0 | 176 | Llegada Columnas Metálicas | 2026-01-28T14:00:00 | 2026-01-29T14:00:00 | PT8H0M0S | 0 |  | 5 | 1.3.1.1.3 |  | 175 |
| 177 | 177 | Llegada Cerchas/Vigas Metálicas | 0 | 0 | 2025-12-01T11:29:00 | 1.3.1.1.4 | 1.3.1.1.4 | 5 | 500 | 2026-01-30T14:00:00 | 2026-02-02T09:00:00 | PT8H0M0S | 7 | 0 | 1 | 0 | 0 | 0 | 0 | 0 | 1 | 0 | 0 | 0 | 3 | 0 | 0 | PT8H0M0S | 0 | -1 | 1970-01-01T00:00:00 | 0 | 0 | 0 | 8 | 0 | 0 | 0 | 0 | 1 | 0 | 177 | Llegada Cerchas/Vigas Metálicas | 2026-01-30T14:00:00 | 2026-02-02T09:00:00 | PT8H0M0S | 0 |  | 5 | 1.3.1.1.4 |  | 176 |
| 178 | 178 | Instalación Columnas | 0 | 0 | 2025-12-01T11:29:00 | 1.3.1.1.5 | 1.3.1.1.5 | 5 | 500 | 2026-01-29T14:00:00 | 2026-02-03T09:00:00 | PT24H0M0S | 7 | 0 | 1 | 0 | 0 | 0 | 0 | 0 | 1 | 0 | 0 | 0 | 3 | 0 | 0 | PT24H0M0S | 0 | -1 | 1970-01-01T00:00:00 | 0 | 0 | 0 | 8 | 0 | 0 | 0 | 0 | 1 | 0 | 178 | Instalación Columnas | 2026-01-29T14:00:00 | 2026-02-03T09:00:00 | PT24H0M0S | 0 |  | 5 | 1.3.1.1.5 |  | 176 |
| 179 | 179 | Instalación Cerchas/Metálicas h:3.50 - 3.60 | 0 | 0 | 2025-12-01T11:29:00 | 1.3.1.1.6 | 1.3.1.1.6 | 5 | 500 | 2026-02-02T09:00:00 | 2026-02-05T09:00:00 | PT24H0M0S | 7 | 0 | 1 | 0 | 0 | 0 | 0 | 0 | 1 | 0 | 0 | 0 | 3 | 0 | 0 | PT24H0M0S | 0 | -1 | 1970-01-01T00:00:00 | 0 | 0 | 0 | 8 | 0 | 0 | 0 | 0 | 1 | 0 | 179 | Instalación Cerchas/Metálicas h:3.50 - 3.60 | 2026-02-02T09:00:00 | 2026-02-05T09:00:00 | PT24H0M0S | 0 |  | 5 | 1.3.1.1.6 |  | 177, 178 |
| 180 | 180 | Entrega Estructura metálica | 0 | 0 | 2025-12-01T11:29:00 | 1.3.1.1.7 | 1.3.1.1.7 | 5 | 500 | 2026-02-03T14:00:00 | 2026-02-05T14:00:00 | PT16H0M0S | 7 | 0 | 1 | 0 | 0 | 0 | 0 | 0 | 1 | 0 | 0 | 0 | 3 | 0 | 0 | PT16H0M0S | 0 | -1 | 1970-01-01T00:00:00 | 0 | 0 | 0 | 8 | 0 | 0 | 0 | 0 | 1 | 0 | 180 | Entrega Estructura metálica | 2026-02-03T14:00:00 | 2026-02-05T14:00:00 | PT16H0M0S | 0 |  | 5 | 1.3.1.1.7 |  | 179 |
| 181 | 181 | Cuartos Ejes P'-T --- 11-12 | 1 | 0 | 2025-12-01T11:30:00 | 1.3.1.1.8 | 1.3.1.1.8 | 5 | 500 | 2026-02-02T09:00:00 | 2026-02-16T14:00:00 | PT92H0M0S | 7 | 0 | 1 | 0 | 0 | 0 | 0 | 0 | 1 | 0 | 0 | 0 | 3 | 0 | 0 | PT92H0M0S | 0 | -1 | 1970-01-01T00:00:00 | 0 | 0 | 0 | 8 | 0 | 0 | 0 | 0 | 1 | 0 | 181 | Cuartos Ejes P'-T --- 11-12 | 2026-02-02T09:00:00 | 2026-02-16T14:00:00 | PT92H0M0S | 0 |  | 5 | 1.3.1.1.8 |  |  |
| 182 | 182 | Replanteo Columnas | 0 | 0 | 2025-11-19T03:59:00 | 1.3.1.1.9 | 1.3.1.1.9 | 5 | 500 | 2026-02-13T14:00:00 | 2026-02-17T09:00:00 | PT16H0M0S | 7 | 0 | 1 | 0 | 0 | 0 | 0 | 1 | 1 | 0 | 0 | 0 | 3 | 0 | 0 | PT16H0M0S | 0 | -1 | 1970-01-01T00:00:00 | 0 | 0 | 0 | 8 | 0 | 0 | 0 | 0 | 1 | 0 | 182 | Replanteo Columnas | 2026-02-13T14:00:00 | 2026-02-17T09:00:00 | PT16H0M0S | 0 | True | 5 | 1.3.1.1.9 |  | 148 |
| 183 | 183 | Replanteo Columnas | 0 | 0 | 2025-12-01T11:30:00 | 1.3.1.1.9.1 | 1.3.1.1.9.1 | 6 | 500 | 2026-02-02T09:00:00 | 2026-02-04T09:00:00 | PT16H0M0S | 7 | 0 | 1 | 0 | 0 | 0 | 0 | 0 | 1 | 0 | 0 | 0 | 3 | 0 | 0 | PT16H0M0S | 0 | -1 | 1970-01-01T00:00:00 | 0 | 0 | 0 | 8 | 0 | 0 | 0 | 0 | 1 | 0 | 183 | Replanteo Columnas | 2026-02-02T09:00:00 | 2026-02-04T09:00:00 | PT16H0M0S | 0 |  | 6 | 1.3.1.1.9.1 |  | 177 |
| 184 | 184 | Compra materiales y Fabricación | 0 | 0 | 2025-12-01T11:30:00 | 1.3.1.1.9.2 | 1.3.1.1.9.2 | 6 | 500 | 2026-02-02T09:00:00 | 2026-02-06T09:00:00 | PT32H0M0S | 7 | 0 | 1 | 0 | 0 | 0 | 0 | 0 | 1 | 0 | 0 | 0 | 3 | 0 | 0 | PT32H0M0S | 0 | -1 | 1970-01-01T00:00:00 | 0 | 0 | 0 | 8 | 0 | 0 | 0 | 0 | 1 | 0 | 184 | Compra materiales y Fabricación | 2026-02-02T09:00:00 | 2026-02-06T09:00:00 | PT32H0M0S | 0 |  | 6 | 1.3.1.1.9.2 |  | 183 |
| 185 | 185 | Entrega Estructura metálica | 0 | 0 | 2025-11-19T03:59:00 | 1.3.1.1.10 | 1.3.1.1.10 | 5 | 500 | 2026-03-04T09:00:00 | 2026-03-06T09:00:00 | PT16H0M0S | 7 | 0 | 1 | 0 | 0 | 0 | 0 | 0 | 1 | 0 | 0 | 0 | 3 | 0 | 0 | PT16H0M0S | 0 | -1 | 1970-01-01T00:00:00 | 0 | 0 | 0 | 8 | 0 | 0 | 0 | 0 | 1 | 0 | 185 | Entrega Estructura metálica | 2026-03-04T09:00:00 | 2026-03-06T09:00:00 | PT16H0M0S | 0 |  | 5 | 1.3.1.1.10 |  | 189 |
| 186 | 186 | Llegada Cerchas/Vigas Metálicas | 0 | 0 | 2025-11-19T03:59:00 | 1.3.1.1.11 | 1.3.1.1.11 | 5 | 500 | 2026-02-23T14:00:00 | 2026-02-24T14:00:00 | PT8H0M0S | 7 | 0 | 1 | 0 | 0 | 0 | 0 | 1 | 1 | 0 | 0 | 0 | 3 | 0 | 0 | PT8H0M0S | 0 | -1 | 1970-01-01T00:00:00 | 0 | 0 | 0 | 8 | 0 | 0 | 0 | 0 | 1 | 0 | 186 | Llegada Cerchas/Vigas Metálicas | 2026-02-23T14:00:00 | 2026-02-24T14:00:00 | PT8H0M0S | 0 | True | 5 | 1.3.1.1.11 |  | 50 |
| 187 | 187 | Llegada Cerchas/Vigas Metálicas | 0 | 0 | 2025-12-01T11:30:00 | 1.3.1.1.11.1 | 1.3.1.1.11.1 | 6 | 500 | 2026-02-10T14:00:00 | 2026-02-11T14:00:00 | PT8H0M0S | 7 | 0 | 1 | 0 | 0 | 0 | 0 | 0 | 1 | 0 | 0 | 0 | 3 | 0 | 0 | PT8H0M0S | 0 | -1 | 1970-01-01T00:00:00 | 0 | 0 | 0 | 8 | 0 | 0 | 0 | 0 | 1 | 0 | 187 | Llegada Cerchas/Vigas Metálicas | 2026-02-10T14:00:00 | 2026-02-11T14:00:00 | PT8H0M0S | 0 |  | 6 | 1.3.1.1.11.1 |  | 197 |
| 188 | 188 | Entrega Estructura metálica | 0 | 0 | 2025-12-01T11:30:00 | 1.3.1.1.11.2 | 1.3.1.1.11.2 | 6 | 500 | 2026-02-13T09:00:00 | 2026-02-16T14:00:00 | PT16H0M0S | 7 | 0 | 1 | 0 | 0 | 0 | 0 | 0 | 1 | 0 | 0 | 0 | 3 | 0 | 0 | PT16H0M0S | 0 | -1 | 1970-01-01T00:00:00 | 0 | 0 | 0 | 8 | 0 | 0 | 0 | 0 | 1 | 0 | 188 | Entrega Estructura metálica | 2026-02-13T09:00:00 | 2026-02-16T14:00:00 | PT16H0M0S | 0 |  | 6 | 1.3.1.1.11.2 |  | 198 |
| 189 | 189 | Instalación Cerchas/Vigas Metálicas h:3.50 - 3.60 | 0 | 0 | 2025-11-19T03:59:00 | 1.3.1.1.12 | 1.3.1.1.12 | 5 | 500 | 2026-02-26T14:00:00 | 2026-03-09T14:00:00 | PT64H0M0S | 7 | 0 | 1 | 0 | 0 | 0 | 0 | 0 | 1 | 0 | 0 | 0 | 3 | 0 | 0 | PT64H0M0S | 0 | -1 | 1970-01-01T00:00:00 | 0 | 0 | 0 | 8 | 0 | 0 | 0 | 0 | 1 | 0 | 189 | Instalación Cerchas/Vigas Metálicas h:3.50 - 3.60 | 2026-02-26T14:00:00 | 2026-03-09T14:00:00 | PT64H0M0S | 0 |  | 5 | 1.3.1.1.12 |  | 186, 160 |
| 190 | 190 | Replanteo Columnas | 0 | 0 | 2025-12-01T11:54:00 | 1.3.1.2 | 1.3.1.2 | 4 | 500 | 2026-03-16T09:00:00 | 2026-03-18T09:00:00 | PT16H0M0S | 7 | 0 | 1 | 0 | 0 | 0 | 0 | 0 | 1 | 0 | 0 | 0 | 3 | 0 | 0 | PT16H0M0S | 0 | -1 | 1970-01-01T00:00:00 | 0 | 0 | 0 | 8 | 0 | 0 | 0 | 0 | 1 | 0 | 190 | Replanteo Columnas | 2026-03-16T09:00:00 | 2026-03-18T09:00:00 | PT16H0M0S | 0 |  | 4 | 1.3.1.2 |  | 14 |
| 191 | 191 | Llegada Cerchas/Vigas Metálicas | 0 | 0 | 2025-12-01T11:54:00 | 1.3.1.3 | 1.3.1.3 | 4 | 500 | 2026-03-25T14:00:00 | 2026-03-26T14:00:00 | PT8H0M0S | 7 | 0 | 1 | 0 | 0 | 0 | 0 | 0 | 1 | 0 | 0 | 0 | 3 | 0 | 0 | PT8H0M0S | 0 | -1 | 1970-01-01T00:00:00 | 0 | 0 | 0 | 8 | 0 | 0 | 0 | 0 | 1 | 0 | 191 | Llegada Cerchas/Vigas Metálicas | 2026-03-25T14:00:00 | 2026-03-26T14:00:00 | PT8H0M0S | 0 |  | 4 | 1.3.1.3 |  | 196 |
| 192 | 192 | Instalación Columnas | 0 | 0 | 2025-12-01T11:54:00 | 1.3.1.4 | 1.3.1.4 | 4 | 500 | 2026-03-24T14:00:00 | 2026-03-27T14:00:00 | PT24H0M0S | 7 | 0 | 1 | 0 | 0 | 0 | 0 | 0 | 1 | 0 | 0 | 0 | 3 | 0 | 0 | PT24H0M0S | 0 | -1 | 1970-01-01T00:00:00 | 0 | 0 | 0 | 8 | 0 | 0 | 0 | 0 | 1 | 0 | 192 | Instalación Columnas | 2026-03-24T14:00:00 | 2026-03-27T14:00:00 | PT24H0M0S | 0 |  | 4 | 1.3.1.4 |  | 196 |
| 193 | 193 | Instalación Cerchas/Metálicas h:3.50 - 3.60 | 0 | 0 | 2025-12-01T11:54:00 | 1.3.1.5 | 1.3.1.5 | 4 | 500 | 2026-03-26T14:00:00 | 2026-03-31T09:00:00 | PT24H0M0S | 7 | 0 | 1 | 0 | 0 | 0 | 0 | 0 | 1 | 0 | 0 | 0 | 3 | 0 | 0 | PT24H0M0S | 0 | -1 | 1970-01-01T00:00:00 | 0 | 0 | 0 | 8 | 0 | 0 | 0 | 0 | 1 | 0 | 193 | Instalación Cerchas/Metálicas h:3.50 - 3.60 | 2026-03-26T14:00:00 | 2026-03-31T09:00:00 | PT24H0M0S | 0 |  | 4 | 1.3.1.5 |  | 191, 192 |
| 194 | 194 | Entrega Estructura metálica | 0 | 0 | 2025-12-01T11:54:00 | 1.3.1.6 | 1.3.1.6 | 4 | 500 | 2026-03-28T09:00:00 | 2026-03-31T14:00:00 | PT16H0M0S | 7 | 0 | 1 | 0 | 0 | 0 | 0 | 0 | 1 | 0 | 0 | 0 | 3 | 0 | 0 | PT16H0M0S | 0 | -1 | 1970-01-01T00:00:00 | 0 | 0 | 0 | 8 | 0 | 0 | 0 | 0 | 1 | 0 | 194 | Entrega Estructura metálica | 2026-03-28T09:00:00 | 2026-03-31T14:00:00 | PT16H0M0S | 0 |  | 4 | 1.3.1.6 |  | 193 |
| 195 | 195 | FIN DE OBRA | 0 | 0 | 2025-12-02T09:45:00 | 2 | 2 | 1 | 500 | 2026-04-07T09:00:00 | 2026-04-07T09:00:00 | PT0H0M0S | 7 | 0 | 1 | 0 | 0 | 0 | 1 | 1 | 1 | 0 | 0 | 0 | 3 | 0 | 0 |  | 0 | -1 | 1970-01-01T00:00:00 | 0 | 0 | 0 | 8 | 0 | 0 | 0 | 0 | 1 | 0 | 195 | FIN DE OBRA | 2026-04-07T09:00:00 | 2026-04-07T09:00:00 | PT0H0M0S | 0 | True | 1 | 2 | True |  |
| 196 | 196 | Llegada Columnas Metálicas | 0 | 0 | 2025-12-01T11:54:00 | 2.1 | 2.1 | 2 | 500 | 2026-03-21T09:00:00 | 2026-03-24T14:00:00 | PT8H0M0S | 7 | 0 | 1 | 0 | 0 | 0 | 0 | 1 | 1 | 0 | 0 | 0 | 3 | 0 | 0 | PT8H0M0S | 0 | -1 | 1970-01-01T00:00:00 | 0 | 0 | 0 | 8 | 0 | 0 | 0 | 0 | 1 | 0 | 196 | Llegada Columnas Metálicas | 2026-03-21T09:00:00 | 2026-03-24T14:00:00 | PT8H0M0S | 0 | True | 2 | 2.1 |  | 200 |
| 197 | 197 | Llegada Columnas Metálicas | 0 | 0 | 2025-12-01T11:30:00 | 2.1.1 | 2.1.1 | 3 | 500 | 2026-02-07T09:00:00 | 2026-02-09T14:00:00 | PT8H0M0S | 7 | 0 | 1 | 0 | 0 | 0 | 0 | 0 | 1 | 0 | 0 | 0 | 3 | 0 | 0 | PT8H0M0S | 0 | -1 | 1970-01-01T00:00:00 | 0 | 0 | 0 | 8 | 0 | 0 | 0 | 0 | 1 | 0 | 197 | Llegada Columnas Metálicas | 2026-02-07T09:00:00 | 2026-02-09T14:00:00 | PT8H0M0S | 0 |  | 3 | 2.1.1 |  |  |
| 198 | 198 | Instalación Cerchas/Metálicas h:3.50 - 3.60 | 0 | 0 | 2025-12-01T11:30:00 | 2.1.2 | 2.1.2 | 3 | 500 | 2026-02-11T14:00:00 | 2026-02-16T09:00:00 | PT24H0M0S | 7 | 0 | 1 | 0 | 0 | 0 | 0 | 0 | 1 | 0 | 0 | 0 | 3 | 0 | 0 | PT24H0M0S | 0 | -1 | 1970-01-01T00:00:00 | 0 | 0 | 0 | 8 | 0 | 0 | 0 | 0 | 1 | 0 | 198 | Instalación Cerchas/Metálicas h:3.50 - 3.60 | 2026-02-11T14:00:00 | 2026-02-16T09:00:00 | PT24H0M0S | 0 |  | 3 | 2.1.2 |  | 58 |
| 199 | 199 | Nivel Intermedio | 1 | 0 | 2025-12-01T11:46:00 | 2.2 | 2.2 | 2 | 500 | 2026-03-16T09:00:00 | 2026-03-31T14:00:00 | PT92H0M0S | 7 | 0 | 1 | 0 | 0 | 0 | 0 | 1 | 1 | 0 | 0 | 0 | 3 | 0 | 0 | PT92H0M0S | 0 | -1 | 1970-01-01T00:00:00 | 0 | 0 | 0 | 8 | 0 | 0 | 0 | 0 | 1 | 0 | 199 | Nivel Intermedio | 2026-03-16T09:00:00 | 2026-03-31T14:00:00 | PT92H0M0S | 0 | True | 2 | 2.2 |  |  |
| 200 | 200 | Compra materiales y Fabricación | 0 | 0 | 2025-12-01T11:54:00 | 2.2.1 | 2.2.1 | 3 | 500 | 2026-03-16T09:00:00 | 2026-03-20T09:00:00 | PT32H0M0S | 7 | 0 | 1 | 0 | 0 | 0 | 0 | 0 | 1 | 0 | 0 | 0 | 3 | 0 | 0 | PT32H0M0S | 0 | -1 | 1970-01-01T00:00:00 | 0 | 0 | 0 | 8 | 0 | 0 | 0 | 0 | 1 | 0 | 200 | Compra materiales y Fabricación | 2026-03-16T09:00:00 | 2026-03-20T09:00:00 | PT32H0M0S | 0 |  | 3 | 2.2.1 |  |  |
